# sample1

How a schedule from MS Project changed from version to version. A marks actual dates.

## Version 1 (saved 2018-05-07, file MSP_WEEKLY.mpp)

Note of the change: msp updated and hw3 finalized

| ID | WBS | Task | Duration | Start | Finish | Predecessors | Complete | Total float |
| --- | --- | --- | --- | --- | --- | --- | --- | --- |
| 1 | 1 | **پروژه ی تحلیل و طراحی** | 196d | 2018-03-05 08:00 A | 2018-08-23 17:00 |  | 18% | 0d |
| 2 | 1.1 | **فاز اول پروژه** | 2d | 2018-03-05 08:00 A | 2018-03-06 17:00 A |  | 100% |  |
| 3 | 1.1.1 | **تهیه پروپوزال** | 1d | 2018-03-05 08:00 A | 2018-03-05 17:00 |  | 100% |  |
| 4 |  | اهداف و توجیه | 1h | 2018-03-05 08:00 A | 2018-03-05 09:00 A |  | 100% |  |
| 5 |  | معرفی و مفاد قرارداد | 1h | 2018-03-05 08:00 A | 2018-03-05 09:00 A |  | 100% |  |
| 6 | 1.1.1.3 | **معرفی سیستم و توضیح تکنولوژی** | 3h | 2018-03-05 08:00 A | 2018-03-05 11:00 A |  | 100% |  |
| 7 |  | تهیه گزینه راه حل‌های تکنولوژی | 1h | 2018-03-05 08:00 A | 2018-03-05 09:00 A |  | 100% |  |
| 8 |  | امکان سنجی گزینه ها | 1h | 2018-03-05 09:00 A | 2018-03-05 10:00 A | 7 | 100% |  |
| 9 |  | انتخاب گزینه راه حل نهایی | 1h | 2018-03-05 10:00 A | 2018-03-05 11:00 A | 8 | 100% |  |
| 10 | 1.1.1.4 | **پوشش نیازمندی‌های کارکردی و غیرکارکردی** | 1h | 2018-03-05 08:00 A | 2018-03-05 09:00 A |  | 100% |  |
| 11 |  | نیازمندی‌های کارکردی | 1h | 2018-03-05 08:00 A | 2018-03-05 09:00 A |  | 100% |  |
| 12 |  | نیازمندی‌های غیرکارکردی | 1h | 2018-03-05 08:00 A | 2018-03-05 09:00 A |  | 100% |  |
| 13 |  | برآورد زمانی | 1h | 2018-03-05 09:00 A | 2018-03-05 10:00 A |  | 100% |  |
| 14 |  | برآوردمالی | 1h | 2018-03-05 10:00 A | 2018-03-05 11:00 A | 13 | 100% |  |
| 15 |  | مراحل اجرای پروژه | 1h | 2018-03-05 08:00 A | 2018-03-05 09:00 A |  | 100% |  |
| 16 |  | معرفی اعضای گروه | 1h | 2018-03-05 08:00 A | 2018-03-05 09:00 A |  | 100% |  |
| 17 |  | بیان نمرات اضافی | 1h | 2018-03-05 09:00 A | 2018-03-05 10:00 A |  | 100% |  |
| 18 |  | بازخوانی و تصحیح پروپوزال و آماده سازی نسخه نهایی | 1d | 2018-03-06 08:00 A | 2018-03-06 17:00 A | 3 | 100% |  |
| 19 |  | ارسال نسخه نهایی | 0d | 2018-03-06 17:00 A | 2018-03-06 17:00 A | 18 | 100% |  |
| 20 | 1.2 | **فاز دوم پروژه** | 9.5d | 2018-03-07 08:00 A | 2018-03-15 12:00 A | 2 | 100% |  |
| 21 | 1.2.1 | **آماده سازی درخت شکست کار** | 0.12d | 2018-03-07 08:00 A | 2018-03-07 09:00 A |  | 100% |  |
| 22 |  | مرور پروپوزال و موارد تعیین شده | 1h | 2018-03-07 08:00 A | 2018-03-07 09:00 A |  | 100% |  |
| 23 |  | تخمین زمانی هر فاز | 1h | 2018-03-07 08:00 A | 2018-03-07 09:00 A |  | 100% |  |
| 24 |  | تخمین منابع مورد نیاز | 1h | 2018-03-07 08:00 A | 2018-03-07 09:00 A |  | 100% |  |
| 25 |  | تقسیم بندی وظایف متناسب با تخمین های زده شده | 1h | 2018-03-07 08:00 A | 2018-03-07 09:00 A |  | 100% |  |
| 26 |  | وارد کردن ساختار درخت شکست کار در نرم افزار | 2d | 2018-03-07 09:00 A | 2018-03-09 09:00 A | 21 | 100% |  |
| 27 |  | کنترل نهایی مدیر پروژه و ارسال | 3h | 2018-03-15 09:00 A | 2018-03-15 12:00 A | 26FS+4d | 100% |  |
| 28 | 1.3 | **فاز سوم پروژه** | 32d | 2018-04-03 08:00 A | 2018-04-30 17:00 | 20 | 100% |  |
| 29 | 1.3.1 | **use case تدوین** | 30.38d | 2018-04-03 08:00 A | 2018-04-29 15:00 A |  | 100% |  |
| 30 | 1.3.1.1 | **use case تدوین** | 12.12d | 2018-04-03 08:00 A | 2018-04-14 09:00 A |  | 100% |  |
| 31 |  | شناسایی ابزار مناسب نرم افزاری | 2h | 2018-04-03 08:00 A | 2018-04-03 10:00 A |  | 100% |  |
| 32 | 1.3.1.1.2 | **use case نوشتن** | 6.25d | 2018-04-03 08:00 A | 2018-04-08 14:00 A |  | 100% |  |
| 33 |  | actors مشخص کردن | 34h | 2018-04-03 08:00 A | 2018-04-07 10:00 A |  | 100% |  |
| 34 |  | مشخص کردن نیاز مندی های کسب و کاری | 15h | 2018-04-03 08:00 A | 2018-04-04 16:00 A |  | 100% |  |
| 35 |  | نوشتن دیاگرام کلی بر روی کاغذ | 2d | 2018-04-07 10:00 A | 2018-04-08 14:00 A | 33, 34 | 100% |  |
| 36 |  | تایید نهایی دیاگرام توسط مدیر پروژه و اعضا | 3h | 2018-04-08 14:00 A | 2018-04-08 17:00 A | 35 | 100% |  |
| 37 |  | وارد کردن در ابزار مناسب | 8h | 2018-04-08 17:00 A | 2018-04-09 14:00 A | 36 | 100% |  |
| 38 | 1.3.1.1.5 | **مستند سازی** | 4.12d | 2018-04-09 14:00 A | 2018-04-13 15:00 A |  | 100% |  |
| 39 |  | use case مستند سازی | 3d | 2018-04-09 14:00 A | 2018-04-12 14:00 A | 37 | 100% |  |
| 40 |  | اولویت بندی | 4h | 2018-04-12 14:00 A | 2018-04-13 09:00 A | 39 | 100% |  |
| 41 |  | پیدا کردن رابطه های پیشنیازی و پسنیازی | 5h | 2018-04-13 09:00 A | 2018-04-13 15:00 A | 40 | 100% |  |
| 42 |  | تایید و بازخوانی توسط اعضا و مدیر و ادغام | 3h | 2018-04-13 15:00 A | 2018-04-14 09:00 A | 41 | 100% |  |
| 43 | 1.3.1.2 | **تدوین سناریو های تست** | 7.38d | 2018-04-23 08:00 A | 2018-04-29 15:00 A |  | 100% |  |
| 44 |  | نوشتن سناریو ها | 3d | 2018-04-23 08:00 A | 2018-04-25 17:00 A | 42 | 100% |  |
| 45 |  | مشخص کردن تست ها | 2d | 2018-04-26 08:00 A | 2018-04-27 17:00 A | 44 | 100% |  |
| 46 |  | مشخص کردن داده ی تست ها | 2d | 2018-04-28 08:00 A | 2018-04-29 12:00 A | 45 | 100% |  |
| 47 |  | تایید توسط اعضا و مدیر | 3h | 2018-04-29 12:00 A | 2018-04-29 15:00 A | 46 | 100% |  |
| 48 |  | وتست هاuse case فرستادن | 1h | 2018-04-29 15:00 A | 2018-04-29 16:00 A | 47 | 100% |  |
| 49 | 1.4 | **فاز چهارم پروژه** | 48d | 2018-05-03 08:00 | 2018-06-13 17:00 | 48 |  |  |
| 50 | 1.4.1 | **use case تدوین** | 27.38d | 2018-05-10 08:00 | 2018-06-02 19:00 |  |  |  |
| 51 | 1.4.1.1 | **use case تدوین** | 16.62d | 2018-05-03 08:00 | 2018-05-17 14:00 |  |  |  |
| 52 | 1.4.1.1.1 | **use case نوشتن** | 8.75d | 2018-05-03 08:00 | 2018-05-10 15:00 |  |  | 22.25d |
| 53 |  | actors مشخص کردن | 2d | 2018-05-03 08:00 | 2018-05-04 17:00 | 48 |  | 22.25d |
| 54 |  | مشخص کردن نیاز مندی های کسب و کاری | 30h | 2018-05-05 08:00 | 2018-05-07 15:00 | 53 |  | 22.25d |
| 55 |  | نوشتن دیاگرام کلی بر روی کاغذ | 3d | 2018-05-07 15:00 | 2018-05-10 15:00 | 54 |  | 22.25d |
| 56 |  | تایید نهایی دیاگرام توسط مدیر پروژه و اعضا | 3h | 2018-05-10 15:00 | 2018-05-11 09:00 | 55 |  | 22.25d |
| 57 |  | وارد کردن در ابزار مناسب | 8h | 2018-05-11 09:00 | 2018-05-12 09:00 | 56 |  | 22.25d |
| 58 | 1.4.1.1.4 | **مستند سازی** | 5.88d | 2018-05-12 09:00 | 2018-05-16 17:00 |  |  | 22.25d |
| 59 |  | use case مستند سازی | 4d | 2018-05-12 09:00 | 2018-05-15 09:00 | 57 |  | 22.25d |
| 60 |  | اولویت بندی | 6h | 2018-05-15 09:00 | 2018-05-15 16:00 | 59 |  | 22.25d |
| 61 |  | پیدا کردن رابطه های پیشنیازی و پسنیازی | 9h | 2018-05-15 16:00 | 2018-05-16 17:00 | 60 |  | 22.25d |
| 62 |  | تایید و بازخوانی توسط اعضا و مدیر | 5h | 2018-05-17 08:00 | 2018-05-17 14:00 | 61 |  | 22.25d |
| 63 | 1.4.1.2 | **تدوین سناریو های تست** | 10d | 2018-05-17 14:00 | 2018-05-26 13:00 |  |  | 22.25d |
| 64 |  | نوشتن سناریو ها | 4d | 2018-05-17 14:00 | 2018-05-20 17:00 | 62 |  | 22.25d |
| 65 |  | مشخص کردن تست ها | 3d | 2018-05-20 17:00 | 2018-05-23 14:00 | 64 |  | 22.25d |
| 66 |  | مشخص کردن داده ی تست ها | 3d | 2018-05-23 14:00 | 2018-05-26 13:00 | 65 |  | 22.25d |
| 67 |  | تایید توسط اعضا و مدیر | 6h | 2018-05-26 13:00 | 2018-05-26 19:00 | 66 |  | 22.25d |
| 68 |  | وتست هاuse case فرستادن | 1h | 2018-05-26 19:00 | 2018-05-26 20:00 | 67 |  | 22.25d |
| 69 | 1.5 | **فاز پنجم پروژه** | 648h | 2018-06-14 08:00 | 2018-08-23 17:00 |  |  |  |
| 70 | 1.5.1 | **ERD تحلیل و تدوین** | 7.5d | 2018-06-14 08:00 | 2018-06-20 12:00 |  |  | 1.75d |

| ID | WBS | Task | Duration | Start | Finish | Predecessors | Total float | Constraint |
| --- | --- | --- | --- | --- | --- | --- | --- | --- |
| 71 |  | مطالعه و تحلیل محیط | 2h | 2018-06-14 08:00 | 2018-06-14 10:00 | 68 | 1.75d |  |
| 72 |  | مشخص کردن نیاز مندی ها | 3h | 2018-06-14 10:00 | 2018-06-14 14:00 | 71 | 1.75d |  |
| 73 |  | تشخیص محدودیت ها | 3h | 2018-06-14 14:00 | 2018-06-14 17:00 | 72 | 1.75d |  |
| 74 | 1.5.1.4 | **مطالعه موجودیت ها** | 1.12d | 2018-06-15 08:00 | 2018-06-16 09:00 |  | 1.75d |  |
| 75 |  | تعیین موجودیت ها | 2h | 2018-06-15 08:00 | 2018-06-15 10:00 | 73 | 1.75d |  |
| 76 |  | تعیین وضع موجودیت ها | 2h | 2018-06-15 10:00 | 2018-06-15 12:00 | 75 | 79.5d |  |
| 77 |  | تعیین صفت ها ی هر موجودیت | 4h | 2018-06-15 10:00 | 2018-06-15 15:00 | 75 | 1.75d |  |
| 78 | 1.5.1.4.4 | **نوع ارتباط های موجودیت ها** | 0.38d | 2018-06-15 15:00 | 2018-06-16 09:00 | 77 | 1.75d |  |
| 79 |  | چندی ارتباط | 3h | 2018-06-15 15:00 | 2018-06-16 09:00 |  | 78.88d |  |
| 80 |  | الزامی بودن یا نبودن ارتباط | 1h | 2018-06-15 15:00 | 2018-06-15 16:00 |  | 1.75d |  |
| 81 | 1.5.1.5 | **نمودار** | 4.62d | 2018-06-15 16:00 | 2018-06-19 12:00 |  | 73.5d |  |
| 82 |  | رسم نمودار بر کاغذ | 2d | 2018-06-15 16:00 | 2018-06-17 11:00 | 80 | 74.62d |  |
| 83 |  | وارسی نمودار و بهینه سازی | 1d | 2018-06-18 08:00 | 2018-06-18 17:00 | 82 | 73.5d | start no earlier than 2018-06-18 08:00 |
| 84 |  | تایید توسط اعضا و مدیر | 2h | 2018-06-19 08:00 | 2018-06-19 10:00 | 83 | 73.5d |  |
| 85 |  | رسم با ابزار مناسب | 2h | 2018-06-19 10:00 | 2018-06-19 12:00 | 84 | 73.5d |  |
| 86 |  | نوشتن یادداشت های تکمیلی در صورت نیاز | 1d | 2018-06-19 13:00 | 2018-06-20 12:00 | 85 | 73.5d |  |
| 87 |  | تایید توسط اعضا و مدیر | 1h | 2018-06-14 08:00 | 2018-06-14 09:00 |  | 80.75d |  |
| 88 |  | ارسال | 1h | 2018-06-14 09:00 | 2018-06-14 10:00 | 87 | 80.75d |  |
| 89 | 1.5.2 | **پیاده سازی سامانه** | 77.38d | 2018-06-15 16:00 | 2018-08-22 10:00 |  | 1.75d |  |
| 90 | 1.5.2.1 | **طراحی منطقی سامانه** | 16.38d | 2018-06-15 16:00 | 2018-06-30 10:00 |  | 1.75d |  |
| 91 | 1.5.2.1.1 | **طراحی منطقی ظاهر کلی سامانه** | 4d | 2018-06-15 16:00 | 2018-06-18 16:00 |  | 1.75d |  |
| 92 |  | طراحی منطقی صفحات سامانه | 2d | 2018-06-15 16:00 | 2018-06-17 11:00 | 80 | 1.75d |  |
| 93 | 1.5.2.1.1.2 | **ارتباط صفحات سامانه با هم دیگر** | 2d | 2018-06-17 11:00 | 2018-06-18 16:00 |  | 1.75d |  |
| 94 |  | ارتباط درون سامانه ای | 2d | 2018-06-17 11:00 | 2018-06-18 16:00 | 92 | 1.75d |  |
| 95 |  | ارتباط های برون سامانه ای به درون سامانه ای | 2d | 2018-06-17 11:00 | 2018-06-18 16:00 | 94SS | 1.75d |  |
| 96 | 1.5.2.1.2 | **طراحی منطقی مکانیزم های ارتباط** | 10d | 2018-06-18 16:00 | 2018-06-27 16:00 |  | 1.75d |  |
| 97 |  | مکانیزم های انتقال داده | 3d | 2018-06-18 16:00 | 2018-06-21 16:00 | 95 | 1.75d |  |
| 98 |  | مکانیزم های ارسال داده ای خودکار | 4d | 2018-06-21 16:00 | 2018-06-24 19:00 | 97 | 1.75d |  |
| 99 |  | مکانیزم های کنترلی | 3d | 2018-06-24 19:00 | 2018-06-27 16:00 | 98 | 1.75d |  |
| 100 |  | یادداشت های تکمیلی | 1d | 2018-06-27 16:00 | 2018-06-28 16:00 | 99 | 1.75d |  |
| 101 |  | تایید توسط مدیر پروژه | 3h | 2018-06-28 16:00 | 2018-06-29 10:00 | 100 | 1.75d |  |
| 102 |  | مستند سازی طراحی منطقی | 1d | 2018-06-29 10:00 | 2018-06-30 10:00 | 101 | 1.75d |  |
| 103 | 1.5.2.2 | **پیاده سازی** | 61d | 2018-06-30 10:00 | 2018-08-22 10:00 |  | 1.75d |  |
| 104 |  | پیاده سازی صفحات مختلف | 15d | 2018-06-30 10:00 | 2018-07-13 10:00 | 102 | 1.75d |  |
| 105 | 1.5.2.2.2 | **پیاده سازی ارتباط ها** | 25d | 2018-07-13 10:00 | 2018-08-04 10:00 |  | 1.75d |  |
| 106 |  | پیاده سازی ارتباط صفحات | 8d | 2018-07-13 10:00 | 2018-07-20 10:00 | 104 | 1.75d |  |
| 107 |  | پیاده سازی ارتباط برون سامانه ای | 6d | 2018-07-13 10:00 | 2018-07-18 10:00 | 104 | 3.75d |  |
| 108 |  | پیاده سازی ارتباط های داده ای و پشت سامانه ای | 17d | 2018-07-20 10:00 | 2018-08-04 10:00 | 107, 106 | 1.75d |  |
| 109 |  | پیاده سازی مکانیزم های کنترلی | 7d | 2018-08-04 10:00 | 2018-08-10 10:00 | 108 | 1.75d |  |
| 110 |  | تست و بهبود سامانه | 7d | 2018-08-10 10:00 | 2018-08-16 10:00 | 109 | 1.75d |  |
| 111 |  | نمرات اضافی | 6d | 2018-08-16 10:00 | 2018-08-21 10:00 | 110 | 1.75d |  |
| 112 |  | تحویل سامانه | 1d | 2018-08-21 10:00 | 2018-08-22 10:00 | 111 | 1.75d |  |

## Version 2 (saved 2018-05-15, file MSP_WEEKLY.mpp)

Note of the change: msp updated

Last finish stays 2018-08-23. Complete tasks 35 → 38.

Changed:

| ID | Task | Start | Finish | Complete | Total float |
| --- | --- | --- | --- | --- | --- |
| 1 | **پروژه ی تحلیل و طراحی** |  |  | 18% → 24% |  |
| 49 | **فاز چهارم پروژه** | 2018-05-03 08:00 A |  | 0% → 32% |  |
| 50 | **use case تدوین** |  |  | 0% → 32% |  |
| 51 | **use case تدوین** | 2018-05-03 08:00 A |  | 0% → 53% |  |
| 52 | **use case نوشتن** | 2018-05-03 08:00 A | 2018-05-10 15:00 A | 0% → 100% | 22.25d → none |
| 53 | actors مشخص کردن | 2018-05-03 08:00 A | 2018-05-04 17:00 A | 0% → 100% | 22.25d → none |
| 54 | مشخص کردن نیاز مندی های کسب و کاری | 2018-05-05 08:00 A | 2018-05-07 15:00 A | 0% → 100% | 22.25d → none |
| 55 | نوشتن دیاگرام کلی بر روی کاغذ | 2018-05-07 15:00 A | 2018-05-10 15:00 A | 0% → 100% | 22.25d → none |

## Version 3 (saved 2018-06-03, file MSP_WEEKLY.mpp)

Note of the change: UI design Added

Last finish stays 2018-08-23. Complete tasks 38 → 44.

Changed:

| ID | Task | Start | Finish | Duration | Complete | Total float | Other |
| --- | --- | --- | --- | --- | --- | --- | --- |
| 1 | **پروژه ی تحلیل و طراحی** |  |  |  | 24% → 33% |  |  |
| 49 | **فاز چهارم پروژه** |  |  |  | 32% → 80% |  |  |
| 50 | **use case تدوین** |  |  |  | 32% → 80% |  |  |
| 51 | **use case تدوین** |  |  |  | 53% → 90% |  |  |
| 56 | تایید نهایی دیاگرام توسط مدیر پروژه و اعضا | 2018-05-10 15:00 A | 2018-05-11 09:00 A |  | 0% → 100% | 22.25d → none |  |
| 57 | وارد کردن در ابزار مناسب | 2018-05-11 09:00 → 2018-05-12 09:00 (+1d) | 2018-05-12 09:00 → 2018-05-12 17:00 |  |  | 22.25d → 117.88d | constraint none → finish no earlier than 2018-05-12 17:00 |
| 58 | **مستند سازی** | 2018-05-12 09:00 A | 2018-05-16 17:00 A |  | 0% → 100% | 22.25d → none |  |
| 59 | use case مستند سازی | 2018-05-12 09:00 A | 2018-05-15 09:00 A |  | 0% → 100% | 22.25d → none |  |
| 60 | اولویت بندی | 2018-05-15 09:00 A | 2018-05-15 16:00 A |  | 0% → 100% | 22.25d → none |  |
| 61 | پیدا کردن رابطه های پیشنیازی و پسنیازی | 2018-05-15 16:00 A | 2018-05-16 17:00 A |  | 0% → 100% | 22.25d → none |  |
| 62 | تایید و بازخوانی توسط اعضا و مدیر | 2018-05-17 08:00 → 2018-05-17 11:00 | 2018-05-17 14:00 → 2018-05-17 17:00 |  |  | 22.25d → 112d | constraint none → finish no earlier than 2018-05-17 17:00 |
| 63 | **تدوین سناریو های تست** | 2018-05-17 14:00 → 2018-05-17 08:00 A |  | 10d → 10.62d | 0% → 70% |  |  |
| 64 | نوشتن سناریو ها | 2018-05-17 14:00 → 2018-05-17 08:00 A | 2018-05-20 17:00 → 2018-05-20 12:00 A |  | 0% → 100% | 22.25d → none |  |
| 65 | مشخص کردن تست ها | 2018-05-20 17:00 A | 2018-05-23 14:00 A |  | 0% → 100% | 22.25d → none |  |

## Version 4 (saved 2018-06-17, file MSP_WEEKLY.mpp)

Note of the change: added usecases msp and all

Last finish stays 2018-08-23. Complete tasks 44 → 45.

Changed:

| ID | Task | Start | Finish | Complete | Total float |
| --- | --- | --- | --- | --- | --- |
| 1 | **پروژه ی تحلیل و طراحی** |  |  | 33% → 34% |  |
| 49 | **فاز چهارم پروژه** |  |  | 80% → 84% |  |
| 50 | **use case تدوین** |  |  | 80% → 84% |  |
| 51 | **use case تدوین** |  |  | 90% → 96% |  |
| 57 | وارد کردن در ابزار مناسب | 2018-05-12 09:00 A | 2018-05-12 17:00 A | 0% → 100% | 117.88d → none |

## Version 5 (saved 2018-06-19, file MSP_WEEKLY.mpp)

Note of the change: added final tests in Node and Java with MSP

Last finish stays 2018-08-23. Complete tasks 45 → 46.

Changed:

| ID | Task | Start | Finish | Complete | Total float |
| --- | --- | --- | --- | --- | --- |
| 1 | **پروژه ی تحلیل و طراحی** |  |  | 34% → 36% |  |
| 49 | **فاز چهارم پروژه** |  |  | 84% → 95% |  |
| 50 | **use case تدوین** |  |  | 84% → 95% |  |
| 63 | **تدوین سناریو های تست** |  | 2018-05-26 13:00 A | 70% → 100% | 22.25d → none |
| 66 | مشخص کردن داده ی تست ها | 2018-05-23 14:00 A | 2018-05-26 13:00 A | 0% → 100% | 22.25d → none |

## Version 6 (saved 2018-08-04, file MSP_WEEKLY.mpp.pod)

Note of the change: new msp

Last finish 2018-08-23 → 2018-08-04 (-19d). Complete tasks 46 → 0.

Changed:

| ID | Task | Start | Finish | Duration | Complete | Total float |
| --- | --- | --- | --- | --- | --- | --- |
| 1 | **پروژه ی تحلیل و طراحی** | 2018-03-05 08:00 A → 2018-03-05 08:00 | 2018-08-23 17:00 → 2018-08-04 17:00 (-19d) | 196d → 174.12d | 36% → 0% | 0d → none |
| 2 | **فاز اول پروژه** | 2018-03-05 08:00 A → 2018-03-05 08:00 | 2018-03-06 17:00 A → 2018-04-03 08:00 (+28d) | 2d → 33d | 100% → 0% | none → 887.5d |
| 3 | **تهیه پروپوزال** | 2018-03-05 08:00 A → 2018-03-05 08:00 | 2018-03-05 17:00 → 2018-03-05 11:00 | 1d → 0.38d | 100% → 0% | none → 4050d |
| 4 | اهداف و توجیه | 2018-03-05 08:00 A → 2018-03-05 08:00 | 2018-03-05 09:00 A → 2018-03-05 09:00 | 1h → 0.12d | 100% → 0% | none → 4075d |
| 5 | معرفی و مفاد قرارداد | 2018-03-05 08:00 A → 2018-03-05 08:00 | 2018-03-05 09:00 A → 2018-03-05 09:00 | 1h → 0.12d | 100% → 0% | none → 4075d |
| 6 | **معرفی سیستم و توضیح تکنولوژی** | 2018-03-05 08:00 A → 2018-03-05 08:00 | 2018-03-05 11:00 A → 2018-03-05 11:00 | 3h → 0.38d | 100% → 0% | none → 4050d |
| 7 | تهیه گزینه راه حل‌های تکنولوژی | 2018-03-05 08:00 A → 2018-03-05 08:00 | 2018-03-05 09:00 A → 2018-03-05 09:00 | 1h → 0.12d | 100% → 0% | none → 4050d |
| 8 | امکان سنجی گزینه ها | 2018-03-05 09:00 A → 2018-03-05 09:00 | 2018-03-05 10:00 A → 2018-03-05 10:00 | 1h → 0.12d | 100% → 0% | none → 4050d |
| 9 | انتخاب گزینه راه حل نهایی | 2018-03-05 10:00 A → 2018-03-05 10:00 | 2018-03-05 11:00 A → 2018-03-05 11:00 | 1h → 0.12d | 100% → 0% | none → 4050d |
| 10 | **پوشش نیازمندی‌های کارکردی و غیرکارکردی** | 2018-03-05 08:00 A → 2018-03-05 08:00 | 2018-03-05 09:00 A → 2018-03-05 09:00 | 1h → 0.12d | 100% → 0% | none → 4075d |
| 11 | نیازمندی‌های کارکردی | 2018-03-05 08:00 A → 2018-03-05 08:00 | 2018-03-05 09:00 A → 2018-03-05 09:00 | 1h → 0.12d | 100% → 0% | none → 4075d |
| 12 | نیازمندی‌های غیرکارکردی | 2018-03-05 08:00 A → 2018-03-05 08:00 | 2018-03-05 09:00 A → 2018-03-05 09:00 | 1h → 0.12d | 100% → 0% | none → 4075d |
| 13 | برآورد زمانی | 2018-03-05 09:00 A → 2018-03-05 09:00 | 2018-03-05 10:00 A → 2018-03-05 10:00 | 1h → 0.12d | 100% → 0% | none → 4050d |
| 14 | برآوردمالی | 2018-03-05 10:00 A → 2018-03-05 10:00 | 2018-03-05 11:00 A → 2018-03-05 11:00 | 1h → 0.12d | 100% → 0% | none → 4050d |
| 15 | مراحل اجرای پروژه | 2018-03-05 08:00 A → 2018-03-05 08:00 | 2018-03-05 09:00 A → 2018-03-05 09:00 | 1h → 0.12d | 100% → 0% | none → 4075d |
| 16 | معرفی اعضای گروه | 2018-03-05 08:00 A → 2018-03-05 08:00 | 2018-03-05 09:00 A → 2018-03-05 09:00 | 1h → 0.12d | 100% → 0% | none → 4075d |
| 17 | بیان نمرات اضافی | 2018-03-05 09:00 A → 2018-03-05 09:00 | 2018-03-05 10:00 A → 2018-03-05 10:00 | 1h → 0.12d | 100% → 0% | none → 4062.5d |
| 18 | بازخوانی و تصحیح پروپوزال و آماده سازی نسخه نهایی | 2018-03-06 08:00 A → 2018-03-06 08:00 | 2018-03-06 17:00 A → 2018-03-06 17:00 |  | 100% → 0% | none → 3987.5d |
| 19 | ارسال نسخه نهایی | 2018-03-06 17:00 A → 2018-04-03 08:00 (+28d) | 2018-03-06 17:00 A → 2018-04-03 08:00 (+28d) |  | 100% → 0% | none → 887.5d |
| 20 | **فاز دوم پروژه** | 2018-03-07 08:00 A → 2018-03-07 08:00 | 2018-03-15 12:00 A → 2018-04-03 11:00 (+19d) | 9.5d → 31.38d | 100% → 0% | none → 1500d |
| 21 | **آماده سازی درخت شکست کار** | 2018-03-07 08:00 A → 2018-03-07 08:00 | 2018-03-07 09:00 A → 2018-04-03 09:00 (+27d) | 0.12d → 31.12d | 100% → 0% | none → 887.5d |
| 22 | مرور پروپوزال و موارد تعیین شده | 2018-03-07 08:00 A → 2018-03-07 08:00 | 2018-03-07 09:00 A → 2018-04-03 09:00 (+27d) | 1h → 0.12d | 100% → 0% | none → 887.5d |
| 23 | تخمین زمانی هر فاز | 2018-03-07 08:00 A → 2018-03-07 08:00 | 2018-03-07 09:00 A → 2018-04-03 09:00 (+27d) | 1h → 0.12d | 100% → 0% | none → 887.5d |
| 24 | تخمین منابع مورد نیاز | 2018-03-07 08:00 A → 2018-03-07 08:00 | 2018-03-07 09:00 A → 2018-04-03 09:00 (+27d) | 1h → 0.12d | 100% → 0% | none → 887.5d |
| 25 | تقسیم بندی وظایف متناسب با تخمین های زده شده | 2018-03-07 08:00 A → 2018-03-07 08:00 | 2018-03-07 09:00 A → 2018-04-03 09:00 (+27d) | 1h → 0.12d | 100% → 0% | none → 887.5d |
| 26 | وارد کردن ساختار درخت شکست کار در نرم افزار | 2018-03-07 09:00 A → 2018-03-07 09:00 | 2018-03-09 09:00 A → 2018-03-09 09:00 |  | 100% → 0% | none → 3987.5d |
| 27 | کنترل نهایی مدیر پروژه و ارسال | 2018-03-15 09:00 A → 2018-03-15 09:00 | 2018-03-15 12:00 A → 2018-04-03 11:00 (+19d) | 3h → 0.38d | 100% → 0% | none → 1500d |
| 28 | **فاز سوم پروژه** | 2018-04-03 08:00 A → 2018-04-03 08:00 | 2018-04-30 17:00 → 2018-04-29 16:00 (-1d) | 32d → 30.5d | 100% → 0% | none → 11062.5d |
| 29 | **use case تدوین** | 2018-04-03 08:00 A → 2018-04-03 08:00 | 2018-04-29 15:00 A → 2018-04-29 15:00 |  | 100% → 0% | none → 11075d |
| 30 | **use case تدوین** | 2018-05-10 08:00 → 2018-04-03 08:00 (-37d) | 2018-06-02 19:00 → 2018-04-14 09:00 (-49d) | 27.38d → 12.12d | 95% → 0% | none → 12900d |
| 31 | شناسایی ابزار مناسب نرم افزاری | 2018-04-03 08:00 A → 2018-04-03 08:00 | 2018-04-03 10:00 A → 2018-04-03 10:00 | 2h → 0.25d | 100% → 0% | none → 14087.5d |
| 32 | **use case نوشتن** | 2018-04-03 08:00 A → 2018-04-03 08:00 | 2018-04-08 14:00 A → 2018-04-08 14:00 |  | 100% → 0% | none → 1537.5d |
| 33 | actors مشخص کردن | 2018-04-03 08:00 A → 2018-04-03 08:00 | 2018-04-07 10:00 A → 2018-04-07 10:00 | 34h → 4.25d | 100% → 0% | none → 1537.5d |
| 34 | مشخص کردن نیاز مندی های کسب و کاری | 2018-04-03 08:00 A → 2018-04-03 08:00 | 2018-04-04 16:00 A → 2018-04-04 16:00 | 15h → 1.88d | 100% → 0% | none → 1775d |
| 35 | نوشتن دیاگرام کلی بر روی کاغذ | 2018-04-07 10:00 A → 2018-04-07 10:00 | 2018-04-08 14:00 A → 2018-04-08 14:00 |  | 100% → 0% | none → 1537.5d |
| 36 | تایید نهایی دیاگرام توسط مدیر پروژه و اعضا | 2018-04-08 14:00 A → 2018-04-08 14:00 | 2018-04-08 17:00 A → 2018-04-08 17:00 | 3h → 0.38d | 100% → 0% | none → 1537.5d |
| 37 | وارد کردن در ابزار مناسب | 2018-04-08 17:00 A → 2018-04-09 08:00 (+1d) | 2018-04-09 14:00 A → 2018-04-09 17:00 | 8h → 1d | 100% → 0% | none → 1500d |
| 38 | **مستند سازی** | 2018-04-09 14:00 A → 2018-04-09 14:00 | 2018-04-13 15:00 A → 2018-04-13 15:00 |  | 100% → 0% | none → 1537.5d |
| 39 | use case مستند سازی | 2018-04-09 14:00 A → 2018-04-09 14:00 | 2018-04-12 14:00 A → 2018-04-12 17:00 | 3d → 3.38d | 100% → 0% | none → 1500d |
| 40 | اولویت بندی | 2018-04-12 14:00 A → 2018-04-12 14:00 | 2018-04-13 09:00 A → 2018-04-13 09:00 | 4h → 0.5d | 100% → 0% | none → 1537.5d |
| 41 | پیدا کردن رابطه های پیشنیازی و پسنیازی | 2018-04-13 09:00 A → 2018-04-13 09:00 | 2018-04-13 15:00 A → 2018-04-13 15:00 | 5h → 0.62d | 100% → 0% | none → 1537.5d |
| 42 | تایید و بازخوانی توسط اعضا و مدیر و ادغام | 2018-04-13 15:00 A → 2018-04-13 15:00 | 2018-04-14 09:00 A → 2018-04-14 09:00 | 3h → 0.38d | 100% → 0% | none → 1537.5d |
| 43 | **تدوین سناریو های تست** | 2018-04-23 08:00 A → 2018-04-23 08:00 | 2018-04-29 15:00 A → 2018-04-29 15:00 |  | 100% → 0% | none → 450d |
| 44 | نوشتن سناریو ها | 2018-04-23 08:00 A → 2018-04-23 08:00 | 2018-04-25 17:00 A → 2018-04-25 17:00 |  | 100% → 0% | none → 450d |
| 45 | مشخص کردن تست ها | 2018-04-26 08:00 A → 2018-04-26 08:00 | 2018-04-27 17:00 A → 2018-04-27 17:00 |  | 100% → 0% | none → 450d |
| 46 | مشخص کردن داده ی تست ها | 2018-04-28 08:00 A → 2018-04-28 08:00 | 2018-04-29 12:00 A → 2018-04-29 12:00 |  | 100% → 0% | none → 450d |
| 47 | تایید توسط اعضا و مدیر | 2018-04-29 12:00 A → 2018-04-29 12:00 | 2018-04-29 15:00 A → 2018-04-29 15:00 | 3h → 0.38d | 100% → 0% | none → 450d |
| 48 | وتست هاuse case فرستادن | 2018-04-29 15:00 A → 2018-04-29 15:00 | 2018-04-29 16:00 A → 2018-04-29 16:00 | 1h → 0.12d | 100% → 0% | none → 450d |
| 49 | **فاز چهارم پروژه** | 2018-05-03 08:00 A → 2018-05-03 08:00 | 2018-06-13 17:00 → 2018-05-27 11:00 (-17d) | 48d → 27.88d | 95% → 0% |  |
| 50 | **use case تدوین** | 2018-05-03 08:00 A → 2018-05-03 08:00 | 2018-05-17 14:00 → 2018-05-27 10:00 (+10d) | 16.62d → 27.75d | 96% → 0% |  |
| 51 | **use case تدوین** | 2018-04-03 08:00 A → 2018-05-03 08:00 (+30d) | 2018-04-14 09:00 A → 2018-05-17 17:00 (+33d) | 12.12d → 17d | 100% → 0% |  |
| 52 | **use case نوشتن** | 2018-05-03 08:00 A → 2018-05-03 08:00 | 2018-05-10 15:00 A → 2018-05-13 10:00 (+3d) | 8.75d → 11.75d | 100% → 0% | none → -200d |
| 53 | actors مشخص کردن | 2018-05-03 08:00 A → 2018-05-03 08:00 | 2018-05-04 17:00 A → 2018-05-04 17:00 |  | 100% → 0% | none → 100d |
| 54 | مشخص کردن نیاز مندی های کسب و کاری | 2018-05-05 08:00 A → 2018-05-07 08:00 (+2d) | 2018-05-07 15:00 A → 2018-05-10 15:00 (+3d) | 30h → 3.75d | 100% → 0% | none → -200d |
| 55 | نوشتن دیاگرام کلی بر روی کاغذ | 2018-05-07 15:00 A → 2018-05-07 15:00 | 2018-05-10 15:00 A → 2018-05-13 10:00 (+3d) | 3d → 6d | 100% → 0% | none → -200d |
| 56 | تایید نهایی دیاگرام توسط مدیر پروژه و اعضا | 2018-05-10 15:00 A → 2018-05-10 15:00 | 2018-05-11 09:00 A → 2018-05-11 09:00 | 3h → 0.38d | 100% → 0% | none → 100d |
| 57 | وارد کردن در ابزار مناسب | 2018-05-12 09:00 A → 2018-05-12 09:00 | 2018-05-12 17:00 A → 2018-05-12 17:00 | 8h → 1d | 100% → 0% |  |
| 58 | **مستند سازی** | 2018-05-12 09:00 A → 2018-05-14 08:00 (+2d) | 2018-05-16 17:00 A → 2018-05-17 17:00 (+1d) | 5.88d → 4d | 100% → 0% | none → -62.5d |
| 59 | use case مستند سازی | 2018-05-12 09:00 A → 2018-05-14 08:00 (+2d) | 2018-05-15 09:00 A → 2018-05-17 17:00 (+2d) |  | 100% → 0% | none → -250d |
| 60 | اولویت بندی | 2018-05-15 09:00 A → 2018-05-15 09:00 | 2018-05-15 16:00 A → 2018-05-15 16:00 | 6h → 0.75d | 100% → 0% | none → 37.5d |
| 61 | پیدا کردن رابطه های پیشنیازی و پسنیازی | 2018-05-15 16:00 A → 2018-05-15 16:00 | 2018-05-16 17:00 A → 2018-05-16 17:00 | 9h → 1.12d | 100% → 0% | none → 37.5d |
| 62 | تایید و بازخوانی توسط اعضا و مدیر |  |  | 5h → 0.62d |  | 112d → none |
| 63 | **تدوین سناریو های تست** | 2018-05-17 08:00 A → 2018-05-17 08:00 | 2018-05-26 13:00 A → 2018-05-26 16:00 | 10.62d → 11d | 100% → 0% |  |
| 64 | نوشتن سناریو ها | 2018-05-17 08:00 A → 2018-05-17 08:00 | 2018-05-20 12:00 A → 2018-05-20 12:00 |  | 100% → 0% | none → 100d |
| 65 | مشخص کردن تست ها | 2018-05-20 17:00 A → 2018-05-21 08:00 (+1d) | 2018-05-23 14:00 A → 2018-05-23 17:00 |  | 100% → 0% |  |
| 66 | مشخص کردن داده ی تست ها | 2018-05-23 14:00 A → 2018-05-24 08:00 (+1d) | 2018-05-26 13:00 A → 2018-05-26 16:00 |  | 100% → 0% |  |
| 67 | تایید توسط اعضا و مدیر | 2018-05-26 13:00 → 2018-05-26 16:00 | 2018-05-26 19:00 → 2018-05-27 10:00 (+1d) | 6h → 0.75d |  | 22.25d → none |
| 68 | وتست هاuse case فرستادن | 2018-05-26 19:00 → 2018-05-27 10:00 (+1d) | 2018-05-26 20:00 → 2018-05-27 11:00 (+1d) | 1h → 0.12d |  | 22.25d → none |
| 69 | **فاز پنجم پروژه** | 2018-06-14 08:00 → 2018-04-03 08:00 (-72d) | 2018-08-23 17:00 → 2018-08-04 17:00 (-19d) | 648h → 141.12d |  |  |
| 70 | **ERD تحلیل و تدوین** | 2018-06-14 08:00 → 2018-04-03 08:00 (-72d) | 2018-06-20 12:00 → 2018-06-20 13:00 | 7.5d → 89.5d |  | 1.75d → 5162.5d |

| ID | Task | Start | Finish | Duration | Total float |
| --- | --- | --- | --- | --- | --- |
| 71 | مطالعه و تحلیل محیط | 2018-06-14 08:00 → 2018-05-27 11:00 (-18d) | 2018-06-14 10:00 → 2018-05-27 13:00 (-18d) | 2h → 0.25d | 1.75d → none |
| 72 | مشخص کردن نیاز مندی ها | 2018-06-14 10:00 → 2018-05-27 13:00 (-18d) | 2018-06-14 14:00 → 2018-05-27 16:00 (-18d) | 3h → 0.38d | 1.75d → none |
| 73 | تشخیص محدودیت ها | 2018-06-14 14:00 → 2018-05-27 16:00 (-18d) | 2018-06-14 17:00 → 2018-05-27 19:00 (-18d) | 3h → 0.38d | 1.75d → none |
| 74 | **مطالعه موجودیت ها** | 2018-06-15 08:00 → 2018-05-27 19:00 (-19d) | 2018-06-16 09:00 → 2018-05-28 17:00 (-19d) |  | 1.75d → 7712.5d |
| 75 | تعیین موجودیت ها | 2018-06-15 08:00 → 2018-05-27 19:00 (-19d) | 2018-06-15 10:00 → 2018-05-28 09:00 (-18d) | 2h → 0.25d | 1.75d → none |
| 76 | تعیین وضع موجودیت ها | 2018-06-15 10:00 → 2018-05-28 09:00 (-18d) | 2018-06-15 12:00 → 2018-05-28 11:00 (-18d) | 2h → 0.25d | 79.5d → 7775d |
| 77 | تعیین صفت ها ی هر موجودیت | 2018-06-15 10:00 → 2018-05-28 09:00 (-18d) | 2018-06-15 15:00 → 2018-05-28 14:00 (-18d) | 4h → 0.5d | 1.75d → none |
| 78 | **نوع ارتباط های موجودیت ها** | 2018-06-15 15:00 → 2018-05-28 14:00 (-18d) | 2018-06-16 09:00 → 2018-05-28 17:00 (-19d) |  | 1.75d → 7712.5d |
| 79 | چندی ارتباط | 2018-06-15 15:00 → 2018-05-28 14:00 (-18d) | 2018-06-16 09:00 → 2018-05-28 17:00 (-19d) | 3h → 0.38d | 78.88d → 7712.5d |
| 80 | الزامی بودن یا نبودن ارتباط | 2018-06-15 15:00 → 2018-05-28 14:00 (-18d) | 2018-06-15 16:00 → 2018-05-28 15:00 (-18d) | 1h → 0.12d | 1.75d → none |
| 81 | **نمودار** | 2018-06-15 16:00 → 2018-05-28 15:00 (-18d) | 2018-06-19 12:00 → 2018-06-19 13:00 | 4.62d → 24.75d | 73.5d → 5162.5d |
| 82 | رسم نمودار بر کاغذ | 2018-06-15 16:00 → 2018-05-28 15:00 (-18d) | 2018-06-17 11:00 → 2018-05-30 15:00 (-18d) |  | 74.62d → 7287.5d |
| 84 | تایید توسط اعضا و مدیر |  |  | 2h → 0.25d | 73.5d → 5162.5d |
| 85 | رسم با ابزار مناسب |  | 2018-06-19 12:00 → 2018-06-19 13:00 | 2h → 0.25d | 73.5d → 5162.5d |
| 86 | نوشتن یادداشت های تکمیلی در صورت نیاز |  | 2018-06-20 12:00 → 2018-06-20 13:00 |  | 73.5d → 5162.5d |
| 87 | تایید توسط اعضا و مدیر | 2018-06-14 08:00 → 2018-04-03 08:00 (-72d) | 2018-06-14 09:00 → 2018-04-03 09:00 (-72d) | 1h → 0.12d | 80.75d → 14087.5d |
| 88 | ارسال | 2018-06-14 09:00 → 2018-04-03 09:00 (-72d) | 2018-06-14 10:00 → 2018-04-03 10:00 (-72d) | 1h → 0.12d | 80.75d → 14087.5d |
| 89 | **پیاده سازی سامانه** | 2018-06-15 16:00 → 2018-05-28 15:00 (-18d) | 2018-08-22 10:00 → 2018-08-04 17:00 (-18d) |  | 1.75d → none |
| 90 | **طراحی منطقی سامانه** | 2018-06-15 16:00 → 2018-05-28 15:00 (-18d) | 2018-06-30 10:00 → 2018-06-12 09:00 (-18d) |  | 1.75d → none |
| 91 | **طراحی منطقی ظاهر کلی سامانه** | 2018-06-15 16:00 → 2018-05-28 15:00 (-18d) | 2018-06-18 16:00 → 2018-06-01 15:00 (-17d) |  | 1.75d → none |
| 92 | طراحی منطقی صفحات سامانه | 2018-06-15 16:00 → 2018-05-28 15:00 (-18d) | 2018-06-17 11:00 → 2018-05-30 15:00 (-18d) |  | 1.75d → none |
| 93 | **ارتباط صفحات سامانه با هم دیگر** | 2018-06-17 11:00 → 2018-05-30 15:00 (-18d) | 2018-06-18 16:00 → 2018-06-01 15:00 (-17d) |  | 1.75d → none |
| 94 | ارتباط درون سامانه ای | 2018-06-17 11:00 → 2018-05-30 15:00 (-18d) | 2018-06-18 16:00 → 2018-06-01 15:00 (-17d) |  | 1.75d → none |
| 95 | ارتباط های برون سامانه ای به درون سامانه ای | 2018-06-17 11:00 → 2018-05-30 15:00 (-18d) | 2018-06-18 16:00 → 2018-06-01 15:00 (-17d) |  | 1.75d → none |
| 96 | **طراحی منطقی مکانیزم های ارتباط** | 2018-06-18 16:00 → 2018-06-01 15:00 (-17d) | 2018-06-27 16:00 → 2018-06-10 10:00 (-17d) |  | 1.75d → none |
| 97 | مکانیزم های انتقال داده | 2018-06-18 16:00 → 2018-06-01 15:00 (-17d) | 2018-06-21 16:00 → 2018-06-03 18:00 (-18d) |  | 1.75d → none |
| 98 | مکانیزم های ارسال داده ای خودکار | 2018-06-21 16:00 → 2018-06-03 18:00 (-18d) | 2018-06-24 19:00 → 2018-06-07 15:00 (-17d) |  | 1.75d → none |
| 99 | مکانیزم های کنترلی | 2018-06-24 19:00 → 2018-06-07 15:00 (-17d) | 2018-06-27 16:00 → 2018-06-10 10:00 (-17d) |  | 1.75d → none |
| 100 | یادداشت های تکمیلی | 2018-06-27 16:00 → 2018-06-10 10:00 (-17d) | 2018-06-28 16:00 → 2018-06-10 18:00 (-18d) |  | 1.75d → none |
| 101 | تایید توسط مدیر پروژه | 2018-06-28 16:00 → 2018-06-10 18:00 (-18d) | 2018-06-29 10:00 → 2018-06-11 09:00 (-18d) | 3h → 0.38d | 1.75d → none |
| 102 | مستند سازی طراحی منطقی | 2018-06-29 10:00 → 2018-06-11 09:00 (-18d) | 2018-06-30 10:00 → 2018-06-12 09:00 (-18d) |  | 1.75d → none |
| 103 | **پیاده سازی** | 2018-06-30 10:00 → 2018-06-12 09:00 (-18d) | 2018-08-22 10:00 → 2018-08-04 17:00 (-18d) |  | 1.75d → none |
| 104 | پیاده سازی صفحات مختلف | 2018-06-30 10:00 → 2018-06-12 09:00 (-18d) | 2018-07-13 10:00 → 2018-06-25 09:00 (-18d) |  | 1.75d → none |
| 105 | **پیاده سازی ارتباط ها** | 2018-07-13 10:00 → 2018-06-25 09:00 (-18d) | 2018-08-04 10:00 → 2018-07-17 09:00 (-18d) |  | 1.75d → none |
| 106 | پیاده سازی ارتباط صفحات | 2018-07-13 10:00 → 2018-06-25 09:00 (-18d) | 2018-07-20 10:00 → 2018-07-02 09:00 (-18d) |  | 1.75d → none |
| 107 | پیاده سازی ارتباط برون سامانه ای | 2018-07-13 10:00 → 2018-06-25 09:00 (-18d) | 2018-07-18 10:00 → 2018-06-30 17:00 (-18d) |  | 3.75d → 200d |
| 108 | پیاده سازی ارتباط های داده ای و پشت سامانه ای | 2018-07-20 10:00 → 2018-07-02 09:00 (-18d) | 2018-08-04 10:00 → 2018-07-17 09:00 (-18d) |  | 1.75d → none |
| 109 | پیاده سازی مکانیزم های کنترلی | 2018-08-04 10:00 → 2018-07-17 09:00 (-18d) | 2018-08-10 10:00 → 2018-07-23 09:00 (-18d) |  | 1.75d → none |
| 110 | تست و بهبود سامانه | 2018-08-10 10:00 → 2018-07-23 09:00 (-18d) | 2018-08-16 10:00 → 2018-07-29 13:00 (-18d) |  | 1.75d → none |
| 111 | نمرات اضافی | 2018-08-16 10:00 → 2018-07-29 13:00 (-18d) | 2018-08-21 10:00 → 2018-08-04 09:00 (-17d) |  | 1.75d → none |
| 112 | تحویل سامانه | 2018-08-21 10:00 → 2018-08-04 09:00 (-17d) | 2018-08-22 10:00 → 2018-08-04 17:00 (-18d) |  | 1.75d → none |

## Version 7 (saved 2018-08-09, file MSP_WEEKLY.mpp.pod)

Note of the change: update msp

Last finish stays 2018-08-04.

Changed:

| ID | Task | Start | Finish | Duration | Total float |
| --- | --- | --- | --- | --- | --- |
| 1 | **پروژه ی تحلیل و طراحی** |  | 2018-08-04 17:00 → 2018-08-04 14:00 | 174.12d → 173.75d |  |
| 49 | **فاز چهارم پروژه** |  | 2018-05-27 11:00 → 2018-05-26 20:00 (-1d) | 27.88d → 27.5d |  |
| 50 | **use case تدوین** |  | 2018-05-27 10:00 → 2018-05-26 19:00 (-1d) | 27.75d → 27.38d |  |
| 63 | **تدوین سناریو های تست** |  | 2018-05-26 16:00 → 2018-05-26 13:00 | 11d → 10.62d |  |
| 66 | مشخص کردن داده ی تست ها | 2018-05-24 08:00 → 2018-05-23 14:00 (-1d) | 2018-05-26 16:00 → 2018-05-26 13:00 |  |  |
| 67 | تایید توسط اعضا و مدیر | 2018-05-26 16:00 → 2018-05-26 13:00 | 2018-05-27 10:00 → 2018-05-26 19:00 (-1d) |  |  |
| 68 | وتست هاuse case فرستادن | 2018-05-27 10:00 → 2018-05-26 19:00 (-1d) | 2018-05-27 11:00 → 2018-05-26 20:00 (-1d) |  |  |
| 69 | **فاز پنجم پروژه** |  | 2018-08-04 17:00 → 2018-08-04 14:00 | 141.12d → 140.75d |  |
| 71 | مطالعه و تحلیل محیط | 2018-05-27 11:00 → 2018-05-27 08:00 | 2018-05-27 13:00 → 2018-05-27 10:00 |  |  |
| 72 | مشخص کردن نیاز مندی ها | 2018-05-27 13:00 → 2018-05-27 10:00 | 2018-05-27 16:00 → 2018-05-27 13:00 |  |  |
| 73 | تشخیص محدودیت ها | 2018-05-27 16:00 → 2018-05-27 13:00 | 2018-05-27 19:00 → 2018-05-27 16:00 |  |  |
| 74 | **مطالعه موجودیت ها** | 2018-05-27 19:00 → 2018-05-27 16:00 | 2018-05-28 17:00 → 2018-05-28 14:00 |  |  |
| 75 | تعیین موجودیت ها | 2018-05-27 19:00 → 2018-05-27 16:00 | 2018-05-28 09:00 → 2018-05-27 18:00 (-1d) |  |  |
| 76 | تعیین وضع موجودیت ها | 2018-05-28 09:00 → 2018-05-27 18:00 (-1d) | 2018-05-28 11:00 → 2018-05-27 20:00 (-1d) |  |  |
| 77 | تعیین صفت ها ی هر موجودیت | 2018-05-28 09:00 → 2018-05-27 18:00 (-1d) | 2018-05-28 14:00 → 2018-05-28 10:00 |  |  |
| 78 | **نوع ارتباط های موجودیت ها** | 2018-05-28 14:00 → 2018-05-28 10:00 | 2018-05-28 17:00 → 2018-05-28 14:00 |  |  |
| 79 | چندی ارتباط | 2018-05-28 14:00 → 2018-05-28 10:00 | 2018-05-28 17:00 → 2018-05-28 14:00 |  |  |
| 80 | الزامی بودن یا نبودن ارتباط | 2018-05-28 14:00 → 2018-05-28 10:00 | 2018-05-28 15:00 → 2018-05-28 11:00 |  |  |
| 81 | **نمودار** | 2018-05-28 15:00 → 2018-05-28 11:00 |  | 24.75d → 25.12d | 5162.5d → 5125d |
| 82 | رسم نمودار بر کاغذ | 2018-05-28 15:00 → 2018-05-28 11:00 | 2018-05-30 15:00 → 2018-05-30 11:00 |  |  |
| 89 | **پیاده سازی سامانه** | 2018-05-28 15:00 → 2018-05-28 11:00 | 2018-08-04 17:00 → 2018-08-04 14:00 |  |  |
| 90 | **طراحی منطقی سامانه** | 2018-05-28 15:00 → 2018-05-28 11:00 | 2018-06-12 09:00 → 2018-06-11 15:00 (-1d) |  |  |
| 91 | **طراحی منطقی ظاهر کلی سامانه** | 2018-05-28 15:00 → 2018-05-28 11:00 | 2018-06-01 15:00 → 2018-06-01 11:00 |  |  |
| 92 | طراحی منطقی صفحات سامانه | 2018-05-28 15:00 → 2018-05-28 11:00 | 2018-05-30 15:00 → 2018-05-30 11:00 |  |  |
| 93 | **ارتباط صفحات سامانه با هم دیگر** | 2018-05-30 15:00 → 2018-05-30 11:00 | 2018-06-01 15:00 → 2018-06-01 11:00 |  |  |
| 94 | ارتباط درون سامانه ای | 2018-05-30 15:00 → 2018-05-30 11:00 | 2018-06-01 15:00 → 2018-06-01 11:00 |  |  |
| 95 | ارتباط های برون سامانه ای به درون سامانه ای | 2018-05-30 15:00 → 2018-05-30 11:00 | 2018-06-01 15:00 → 2018-06-01 11:00 |  |  |
| 96 | **طراحی منطقی مکانیزم های ارتباط** | 2018-06-01 15:00 → 2018-06-01 11:00 | 2018-06-10 10:00 → 2018-06-09 19:00 (-1d) |  |  |
| 97 | مکانیزم های انتقال داده | 2018-06-01 15:00 → 2018-06-01 11:00 | 2018-06-03 18:00 → 2018-06-03 15:00 |  |  |
| 98 | مکانیزم های ارسال داده ای خودکار | 2018-06-03 18:00 → 2018-06-03 15:00 | 2018-06-07 15:00 → 2018-06-07 11:00 |  |  |
| 99 | مکانیزم های کنترلی | 2018-06-07 15:00 → 2018-06-07 11:00 | 2018-06-10 10:00 → 2018-06-09 19:00 (-1d) |  |  |
| 100 | یادداشت های تکمیلی | 2018-06-10 10:00 → 2018-06-09 19:00 (-1d) | 2018-06-10 18:00 → 2018-06-10 15:00 |  |  |
| 101 | تایید توسط مدیر پروژه | 2018-06-10 18:00 → 2018-06-10 15:00 | 2018-06-11 09:00 → 2018-06-10 18:00 (-1d) |  |  |
| 102 | مستند سازی طراحی منطقی | 2018-06-11 09:00 → 2018-06-10 18:00 (-1d) | 2018-06-12 09:00 → 2018-06-11 15:00 (-1d) |  |  |
| 103 | **پیاده سازی** | 2018-06-12 09:00 → 2018-06-11 15:00 (-1d) | 2018-08-04 17:00 → 2018-08-04 14:00 |  |  |
| 104 | پیاده سازی صفحات مختلف | 2018-06-12 09:00 → 2018-06-11 15:00 (-1d) | 2018-06-25 09:00 → 2018-06-24 18:00 (-1d) |  |  |
| 105 | **پیاده سازی ارتباط ها** | 2018-06-25 09:00 → 2018-06-24 18:00 (-1d) | 2018-07-17 09:00 → 2018-07-16 15:00 (-1d) |  |  |
| 106 | پیاده سازی ارتباط صفحات | 2018-06-25 09:00 → 2018-06-24 18:00 (-1d) | 2018-07-02 09:00 → 2018-07-01 18:00 (-1d) |  |  |
| 107 | پیاده سازی ارتباط برون سامانه ای | 2018-06-25 09:00 → 2018-06-24 18:00 (-1d) | 2018-06-30 17:00 → 2018-06-30 14:00 |  |  |
| 108 | پیاده سازی ارتباط های داده ای و پشت سامانه ای | 2018-07-02 09:00 → 2018-07-01 18:00 (-1d) | 2018-07-17 09:00 → 2018-07-16 15:00 (-1d) |  |  |
| 109 | پیاده سازی مکانیزم های کنترلی | 2018-07-17 09:00 → 2018-07-16 15:00 (-1d) | 2018-07-23 09:00 → 2018-07-22 18:00 (-1d) |  |  |
| 110 | تست و بهبود سامانه | 2018-07-23 09:00 → 2018-07-22 18:00 (-1d) | 2018-07-29 13:00 → 2018-07-29 10:00 |  |  |
| 111 | نمرات اضافی | 2018-07-29 13:00 → 2018-07-29 10:00 | 2018-08-04 09:00 → 2018-08-03 15:00 (-1d) |  |  |
| 112 | تحویل سامانه | 2018-08-04 09:00 → 2018-08-03 15:00 (-1d) | 2018-08-04 17:00 → 2018-08-04 14:00 |  |  |

## Version 8 (saved 2018-08-27, file MSP_WEEKLY.mpp.pod)

Note of the change: msp updated

Last finish stays 2018-08-04.

Changed:

| ID | Task | Start | Finish | Duration | Total float |
| --- | --- | --- | --- | --- | --- |
| 2 | **فاز اول پروژه** |  | 2018-04-03 08:00 → 2018-03-07 08:00 (-27d) | 33d → 2d | 887.5d → 3987.5d |
| 19 | ارسال نسخه نهایی | 2018-04-03 08:00 → 2018-03-07 08:00 (-27d) | 2018-04-03 08:00 → 2018-03-07 08:00 (-27d) |  | 887.5d → 3987.5d |

## Version 9 (saved 2018-12-30, file MSP_WEEKLY.mpp)

Note of the change: the revised version for SWE course with comments and revisions by navid

Last finish 2018-08-04 → 2018-08-23 (+19d). Complete tasks 0 → 46.

Changed:

| ID | Task | Start | Finish | Duration | Complete | Total float |
| --- | --- | --- | --- | --- | --- | --- |
| 1 | **پروژه ی تحلیل و طراحی** | 2018-03-05 08:00 A | 2018-08-04 14:00 → 2018-08-23 17:00 (+19d) | 173.75d → 196d | 0% → 36% | none → 0d |
| 2 | **فاز اول پروژه** | 2018-03-05 08:00 A | 2018-03-07 08:00 → 2018-03-06 17:00 A (-1d) |  | 0% → 100% | 3987.5d → none |
| 3 | **تهیه پروپوزال** | 2018-03-05 08:00 A | 2018-03-05 11:00 → 2018-03-05 17:00 | 0.38d → 1d | 0% → 100% | 4050d → none |
| 4 | اهداف و توجیه | 2018-03-05 08:00 A | 2018-03-05 09:00 A | 0.12d → 1h | 0% → 100% | 4075d → none |
| 5 | معرفی و مفاد قرارداد | 2018-03-05 08:00 A | 2018-03-05 09:00 A | 0.12d → 1h | 0% → 100% | 4075d → none |
| 6 | **معرفی سیستم و توضیح تکنولوژی** | 2018-03-05 08:00 A | 2018-03-05 11:00 A | 0.38d → 3h | 0% → 100% | 4050d → none |
| 7 | تهیه گزینه راه حل‌های تکنولوژی | 2018-03-05 08:00 A | 2018-03-05 09:00 A | 0.12d → 1h | 0% → 100% | 4050d → none |
| 8 | امکان سنجی گزینه ها | 2018-03-05 09:00 A | 2018-03-05 10:00 A | 0.12d → 1h | 0% → 100% | 4050d → none |
| 9 | انتخاب گزینه راه حل نهایی | 2018-03-05 10:00 A | 2018-03-05 11:00 A | 0.12d → 1h | 0% → 100% | 4050d → none |
| 10 | **پوشش نیازمندی‌های کارکردی و غیرکارکردی** | 2018-03-05 08:00 A | 2018-03-05 09:00 A | 0.12d → 1h | 0% → 100% | 4075d → none |
| 11 | نیازمندی‌های کارکردی | 2018-03-05 08:00 A | 2018-03-05 09:00 A | 0.12d → 1h | 0% → 100% | 4075d → none |
| 12 | نیازمندی‌های غیرکارکردی | 2018-03-05 08:00 A | 2018-03-05 09:00 A | 0.12d → 1h | 0% → 100% | 4075d → none |
| 13 | برآورد زمانی | 2018-03-05 09:00 A | 2018-03-05 10:00 A | 0.12d → 1h | 0% → 100% | 4050d → none |
| 14 | برآوردمالی | 2018-03-05 10:00 A | 2018-03-05 11:00 A | 0.12d → 1h | 0% → 100% | 4050d → none |
| 15 | مراحل اجرای پروژه | 2018-03-05 08:00 A | 2018-03-05 09:00 A | 0.12d → 1h | 0% → 100% | 4075d → none |
| 16 | معرفی اعضای گروه | 2018-03-05 08:00 A | 2018-03-05 09:00 A | 0.12d → 1h | 0% → 100% | 4075d → none |
| 17 | بیان نمرات اضافی | 2018-03-05 09:00 A | 2018-03-05 10:00 A | 0.12d → 1h | 0% → 100% | 4062.5d → none |
| 18 | بازخوانی و تصحیح پروپوزال و آماده سازی نسخه نهایی | 2018-03-06 08:00 A | 2018-03-06 17:00 A |  | 0% → 100% | 3987.5d → none |
| 19 | ارسال نسخه نهایی | 2018-03-07 08:00 → 2018-03-06 17:00 A (-1d) | 2018-03-07 08:00 → 2018-03-06 17:00 A (-1d) |  | 0% → 100% | 3987.5d → none |
| 20 | **فاز دوم پروژه** | 2018-03-07 08:00 A | 2018-04-03 11:00 → 2018-03-15 12:00 A (-19d) | 31.38d → 9.5d | 0% → 100% | 1500d → none |
| 21 | **آماده سازی درخت شکست کار** | 2018-03-07 08:00 A | 2018-04-03 09:00 → 2018-03-07 09:00 A (-27d) | 31.12d → 0.12d | 0% → 100% | 887.5d → none |
| 22 | مرور پروپوزال و موارد تعیین شده | 2018-03-07 08:00 A | 2018-04-03 09:00 → 2018-03-07 09:00 A (-27d) | 0.12d → 1h | 0% → 100% | 887.5d → none |
| 23 | تخمین زمانی هر فاز | 2018-03-07 08:00 A | 2018-04-03 09:00 → 2018-03-07 09:00 A (-27d) | 0.12d → 1h | 0% → 100% | 887.5d → none |
| 24 | تخمین منابع مورد نیاز | 2018-03-07 08:00 A | 2018-04-03 09:00 → 2018-03-07 09:00 A (-27d) | 0.12d → 1h | 0% → 100% | 887.5d → none |
| 25 | تقسیم بندی وظایف متناسب با تخمین های زده شده | 2018-03-07 08:00 A | 2018-04-03 09:00 → 2018-03-07 09:00 A (-27d) | 0.12d → 1h | 0% → 100% | 887.5d → none |
| 26 | وارد کردن ساختار درخت شکست کار در نرم افزار | 2018-03-07 09:00 A | 2018-03-09 09:00 A |  | 0% → 100% | 3987.5d → none |
| 27 | کنترل نهایی مدیر پروژه و ارسال | 2018-03-15 09:00 A | 2018-04-03 11:00 → 2018-03-15 12:00 A (-19d) | 0.38d → 3h | 0% → 100% | 1500d → none |
| 28 | **فاز سوم پروژه** | 2018-04-03 08:00 A | 2018-04-29 16:00 → 2018-04-30 17:00 (+1d) | 30.5d → 32d | 0% → 100% | 11025d → none |
| 29 | **use case تدوین** | 2018-04-03 08:00 A | 2018-04-29 15:00 A |  | 0% → 100% | 11037.5d → none |
| 30 | **use case تدوین** | 2018-05-03 08:00 → 2018-04-03 08:00 A (-30d) | 2018-05-17 17:00 → 2018-04-14 09:00 A (-33d) | 17d → 12.12d | 0% → 100% |  |
| 31 | شناسایی ابزار مناسب نرم افزاری | 2018-04-03 08:00 A | 2018-04-03 10:00 A | 0.25d → 2h | 0% → 100% | 14050d → none |
| 32 | **use case نوشتن** | 2018-04-03 08:00 A | 2018-04-08 14:00 A |  | 0% → 100% | 1537.5d → none |
| 33 | actors مشخص کردن | 2018-04-03 08:00 A | 2018-04-07 10:00 A | 4.25d → 34h | 0% → 100% | 1537.5d → none |
| 34 | مشخص کردن نیاز مندی های کسب و کاری | 2018-04-03 08:00 A | 2018-04-04 16:00 A | 1.88d → 15h | 0% → 100% | 1775d → none |
| 35 | نوشتن دیاگرام کلی بر روی کاغذ | 2018-04-07 10:00 A | 2018-04-08 14:00 A |  | 0% → 100% | 1537.5d → none |
| 36 | تایید نهایی دیاگرام توسط مدیر پروژه و اعضا | 2018-04-08 14:00 A | 2018-04-08 17:00 A | 0.38d → 3h | 0% → 100% | 1537.5d → none |
| 37 | وارد کردن در ابزار مناسب | 2018-04-09 08:00 → 2018-04-08 17:00 A (-1d) | 2018-04-09 17:00 → 2018-04-09 14:00 A | 1d → 8h | 0% → 100% | 1500d → none |
| 38 | **مستند سازی** | 2018-04-09 14:00 A | 2018-04-13 15:00 A |  | 0% → 100% | 1537.5d → none |
| 39 | use case مستند سازی | 2018-04-09 14:00 A | 2018-04-12 17:00 → 2018-04-12 14:00 A | 3.38d → 3d | 0% → 100% | 1500d → none |
| 40 | اولویت بندی | 2018-04-12 14:00 A | 2018-04-13 09:00 A | 0.5d → 4h | 0% → 100% | 1537.5d → none |
| 41 | پیدا کردن رابطه های پیشنیازی و پسنیازی | 2018-04-13 09:00 A | 2018-04-13 15:00 A | 0.62d → 5h | 0% → 100% | 1537.5d → none |
| 42 | تایید و بازخوانی توسط اعضا و مدیر و ادغام | 2018-04-13 15:00 A | 2018-04-14 09:00 A | 0.38d → 3h | 0% → 100% | 1537.5d → none |
| 43 | **تدوین سناریو های تست** | 2018-04-23 08:00 A | 2018-04-29 15:00 A |  | 0% → 100% | 450d → none |
| 44 | نوشتن سناریو ها | 2018-04-23 08:00 A | 2018-04-25 17:00 A |  | 0% → 100% | 450d → none |
| 45 | مشخص کردن تست ها | 2018-04-26 08:00 A | 2018-04-27 17:00 A |  | 0% → 100% | 450d → none |
| 46 | مشخص کردن داده ی تست ها | 2018-04-28 08:00 A | 2018-04-29 12:00 A |  | 0% → 100% | 450d → none |
| 47 | تایید توسط اعضا و مدیر | 2018-04-29 12:00 A | 2018-04-29 15:00 A | 0.38d → 3h | 0% → 100% | 450d → none |
| 48 | وتست هاuse case فرستادن | 2018-04-29 15:00 A | 2018-04-29 16:00 A | 0.12d → 1h | 0% → 100% | 450d → none |
| 49 | **فاز چهارم پروژه** | 2018-05-03 08:00 A | 2018-05-26 20:00 → 2018-06-13 17:00 (+18d) | 27.5d → 48d | 0% → 95% |  |
| 50 | **use case تدوین** | 2018-04-03 08:00 → 2018-05-10 08:00 (+37d) | 2018-04-14 09:00 → 2018-06-02 19:00 (+49d) | 12.12d → 27.38d | 0% → 95% | 12862.5d → none |
| 51 | **use case تدوین** | 2018-05-03 08:00 A | 2018-05-26 19:00 → 2018-05-17 14:00 (-9d) | 27.38d → 16.62d | 0% → 96% |  |
| 52 | **use case نوشتن** | 2018-05-03 08:00 A | 2018-05-13 10:00 → 2018-05-10 15:00 A (-3d) | 11.75d → 8.75d | 0% → 100% | -200d → none |
| 53 | actors مشخص کردن | 2018-05-03 08:00 A | 2018-05-04 17:00 A |  | 0% → 100% | 100d → none |
| 54 | مشخص کردن نیاز مندی های کسب و کاری | 2018-05-07 08:00 → 2018-05-05 08:00 A (-2d) | 2018-05-10 15:00 → 2018-05-07 15:00 A (-3d) | 3.75d → 30h | 0% → 100% | -200d → none |
| 55 | نوشتن دیاگرام کلی بر روی کاغذ | 2018-05-07 15:00 A | 2018-05-13 10:00 → 2018-05-10 15:00 A (-3d) | 6d → 3d | 0% → 100% | -200d → none |
| 56 | تایید نهایی دیاگرام توسط مدیر پروژه و اعضا | 2018-05-10 15:00 A | 2018-05-11 09:00 A | 0.38d → 3h | 0% → 100% | 100d → none |
| 57 | وارد کردن در ابزار مناسب | 2018-05-12 09:00 A | 2018-05-12 17:00 A | 1d → 8h | 0% → 100% |  |
| 58 | **مستند سازی** | 2018-05-14 08:00 → 2018-05-12 09:00 A (-2d) | 2018-05-17 17:00 → 2018-05-16 17:00 A (-1d) | 4d → 5.88d | 0% → 100% | -62.5d → none |
| 59 | use case مستند سازی | 2018-05-14 08:00 → 2018-05-12 09:00 A (-2d) | 2018-05-17 17:00 → 2018-05-15 09:00 A (-2d) |  | 0% → 100% | -250d → none |
| 60 | اولویت بندی | 2018-05-15 09:00 A | 2018-05-15 16:00 A | 0.75d → 6h | 0% → 100% | 37.5d → none |
| 61 | پیدا کردن رابطه های پیشنیازی و پسنیازی | 2018-05-15 16:00 A | 2018-05-16 17:00 A | 1.12d → 9h | 0% → 100% | 37.5d → none |
| 62 | تایید و بازخوانی توسط اعضا و مدیر |  |  | 0.62d → 5h |  | none → 112d |
| 63 | **تدوین سناریو های تست** | 2018-05-17 08:00 A | 2018-05-26 13:00 A |  | 0% → 100% |  |
| 64 | نوشتن سناریو ها | 2018-05-17 08:00 A | 2018-05-20 12:00 A |  | 0% → 100% | 62.5d → none |
| 65 | مشخص کردن تست ها | 2018-05-21 08:00 → 2018-05-20 17:00 A (-1d) | 2018-05-23 17:00 → 2018-05-23 14:00 A |  | 0% → 100% | -37.5d → none |
| 66 | مشخص کردن داده ی تست ها | 2018-05-23 14:00 A | 2018-05-26 13:00 A |  | 0% → 100% |  |
| 67 | تایید توسط اعضا و مدیر |  |  | 0.75d → 6h |  | none → 22.25d |
| 68 | وتست هاuse case فرستادن |  |  | 0.12d → 1h |  | none → 22.25d |
| 69 | **فاز پنجم پروژه** | 2018-04-03 08:00 → 2018-06-14 08:00 (+72d) | 2018-08-04 14:00 → 2018-08-23 17:00 (+19d) | 140.75d → 648h |  |  |
| 70 | **ERD تحلیل و تدوین** | 2018-04-03 08:00 → 2018-06-14 08:00 (+72d) | 2018-06-20 13:00 → 2018-06-20 12:00 | 89.5d → 7.5d |  | 5125d → 1.75d |

| ID | Task | Start | Finish | Duration | Total float |
| --- | --- | --- | --- | --- | --- |
| 71 | مطالعه و تحلیل محیط | 2018-05-27 08:00 → 2018-06-14 08:00 (+18d) | 2018-05-27 10:00 → 2018-06-14 10:00 (+18d) | 0.25d → 2h | none → 1.75d |
| 72 | مشخص کردن نیاز مندی ها | 2018-05-27 10:00 → 2018-06-14 10:00 (+18d) | 2018-05-27 13:00 → 2018-06-14 14:00 (+18d) | 0.38d → 3h | none → 1.75d |
| 73 | تشخیص محدودیت ها | 2018-05-27 13:00 → 2018-06-14 14:00 (+18d) | 2018-05-27 16:00 → 2018-06-14 17:00 (+18d) | 0.38d → 3h | none → 1.75d |
| 74 | **مطالعه موجودیت ها** | 2018-05-27 16:00 → 2018-06-15 08:00 (+19d) | 2018-05-28 14:00 → 2018-06-16 09:00 (+19d) |  | 7712.5d → 1.75d |
| 75 | تعیین موجودیت ها | 2018-05-27 16:00 → 2018-06-15 08:00 (+19d) | 2018-05-27 18:00 → 2018-06-15 10:00 (+19d) | 0.25d → 2h | none → 1.75d |
| 76 | تعیین وضع موجودیت ها | 2018-05-27 18:00 → 2018-06-15 10:00 (+19d) | 2018-05-27 20:00 → 2018-06-15 12:00 (+19d) | 0.25d → 2h | 7775d → 79.5d |
| 77 | تعیین صفت ها ی هر موجودیت | 2018-05-27 18:00 → 2018-06-15 10:00 (+19d) | 2018-05-28 10:00 → 2018-06-15 15:00 (+18d) | 0.5d → 4h | none → 1.75d |
| 78 | **نوع ارتباط های موجودیت ها** | 2018-05-28 10:00 → 2018-06-15 15:00 (+18d) | 2018-05-28 14:00 → 2018-06-16 09:00 (+19d) |  | 7712.5d → 1.75d |
| 79 | چندی ارتباط | 2018-05-28 10:00 → 2018-06-15 15:00 (+18d) | 2018-05-28 14:00 → 2018-06-16 09:00 (+19d) | 0.38d → 3h | 7712.5d → 78.88d |
| 80 | الزامی بودن یا نبودن ارتباط | 2018-05-28 10:00 → 2018-06-15 15:00 (+18d) | 2018-05-28 11:00 → 2018-06-15 16:00 (+18d) | 0.12d → 1h | none → 1.75d |
| 81 | **نمودار** | 2018-05-28 11:00 → 2018-06-15 16:00 (+18d) | 2018-06-19 13:00 → 2018-06-19 12:00 | 25.12d → 4.62d | 5125d → 73.5d |
| 82 | رسم نمودار بر کاغذ | 2018-05-28 11:00 → 2018-06-15 16:00 (+18d) | 2018-05-30 11:00 → 2018-06-17 11:00 (+18d) |  | 7287.5d → 74.62d |
| 84 | تایید توسط اعضا و مدیر |  |  | 0.25d → 2h | 5125d → 73.5d |
| 85 | رسم با ابزار مناسب |  | 2018-06-19 13:00 → 2018-06-19 12:00 | 0.25d → 2h | 5125d → 73.5d |
| 86 | نوشتن یادداشت های تکمیلی در صورت نیاز |  | 2018-06-20 13:00 → 2018-06-20 12:00 |  | 5125d → 73.5d |
| 87 | تایید توسط اعضا و مدیر | 2018-04-03 08:00 → 2018-06-14 08:00 (+72d) | 2018-04-03 09:00 → 2018-06-14 09:00 (+72d) | 0.12d → 1h | 14050d → 80.75d |
| 88 | ارسال | 2018-04-03 09:00 → 2018-06-14 09:00 (+72d) | 2018-04-03 10:00 → 2018-06-14 10:00 (+72d) | 0.12d → 1h | 14050d → 80.75d |
| 89 | **پیاده سازی سامانه** | 2018-05-28 11:00 → 2018-06-15 16:00 (+18d) | 2018-08-04 14:00 → 2018-08-22 10:00 (+18d) |  | none → 1.75d |
| 90 | **طراحی منطقی سامانه** | 2018-05-28 11:00 → 2018-06-15 16:00 (+18d) | 2018-06-11 15:00 → 2018-06-30 10:00 (+19d) |  | none → 1.75d |
| 91 | **طراحی منطقی ظاهر کلی سامانه** | 2018-05-28 11:00 → 2018-06-15 16:00 (+18d) | 2018-06-01 11:00 → 2018-06-18 16:00 (+17d) |  | none → 1.75d |
| 92 | طراحی منطقی صفحات سامانه | 2018-05-28 11:00 → 2018-06-15 16:00 (+18d) | 2018-05-30 11:00 → 2018-06-17 11:00 (+18d) |  | none → 1.75d |
| 93 | **ارتباط صفحات سامانه با هم دیگر** | 2018-05-30 11:00 → 2018-06-17 11:00 (+18d) | 2018-06-01 11:00 → 2018-06-18 16:00 (+17d) |  | none → 1.75d |
| 94 | ارتباط درون سامانه ای | 2018-05-30 11:00 → 2018-06-17 11:00 (+18d) | 2018-06-01 11:00 → 2018-06-18 16:00 (+17d) |  | none → 1.75d |
| 95 | ارتباط های برون سامانه ای به درون سامانه ای | 2018-05-30 11:00 → 2018-06-17 11:00 (+18d) | 2018-06-01 11:00 → 2018-06-18 16:00 (+17d) |  | none → 1.75d |
| 96 | **طراحی منطقی مکانیزم های ارتباط** | 2018-06-01 11:00 → 2018-06-18 16:00 (+17d) | 2018-06-09 19:00 → 2018-06-27 16:00 (+18d) |  | none → 1.75d |
| 97 | مکانیزم های انتقال داده | 2018-06-01 11:00 → 2018-06-18 16:00 (+17d) | 2018-06-03 15:00 → 2018-06-21 16:00 (+18d) |  | none → 1.75d |
| 98 | مکانیزم های ارسال داده ای خودکار | 2018-06-03 15:00 → 2018-06-21 16:00 (+18d) | 2018-06-07 11:00 → 2018-06-24 19:00 (+17d) |  | none → 1.75d |
| 99 | مکانیزم های کنترلی | 2018-06-07 11:00 → 2018-06-24 19:00 (+17d) | 2018-06-09 19:00 → 2018-06-27 16:00 (+18d) |  | none → 1.75d |
| 100 | یادداشت های تکمیلی | 2018-06-09 19:00 → 2018-06-27 16:00 (+18d) | 2018-06-10 15:00 → 2018-06-28 16:00 (+18d) |  | none → 1.75d |
| 101 | تایید توسط مدیر پروژه | 2018-06-10 15:00 → 2018-06-28 16:00 (+18d) | 2018-06-10 18:00 → 2018-06-29 10:00 (+19d) | 0.38d → 3h | none → 1.75d |
| 102 | مستند سازی طراحی منطقی | 2018-06-10 18:00 → 2018-06-29 10:00 (+19d) | 2018-06-11 15:00 → 2018-06-30 10:00 (+19d) |  | none → 1.75d |
| 103 | **پیاده سازی** | 2018-06-11 15:00 → 2018-06-30 10:00 (+19d) | 2018-08-04 14:00 → 2018-08-22 10:00 (+18d) |  | none → 1.75d |
| 104 | پیاده سازی صفحات مختلف | 2018-06-11 15:00 → 2018-06-30 10:00 (+19d) | 2018-06-24 18:00 → 2018-07-13 10:00 (+19d) |  | none → 1.75d |
| 105 | **پیاده سازی ارتباط ها** | 2018-06-24 18:00 → 2018-07-13 10:00 (+19d) | 2018-07-16 15:00 → 2018-08-04 10:00 (+19d) |  | none → 1.75d |
| 106 | پیاده سازی ارتباط صفحات | 2018-06-24 18:00 → 2018-07-13 10:00 (+19d) | 2018-07-01 18:00 → 2018-07-20 10:00 (+19d) |  | none → 1.75d |
| 107 | پیاده سازی ارتباط برون سامانه ای | 2018-06-24 18:00 → 2018-07-13 10:00 (+19d) | 2018-06-30 14:00 → 2018-07-18 10:00 (+18d) |  | 200d → 3.75d |
| 108 | پیاده سازی ارتباط های داده ای و پشت سامانه ای | 2018-07-01 18:00 → 2018-07-20 10:00 (+19d) | 2018-07-16 15:00 → 2018-08-04 10:00 (+19d) |  | none → 1.75d |
| 109 | پیاده سازی مکانیزم های کنترلی | 2018-07-16 15:00 → 2018-08-04 10:00 (+19d) | 2018-07-22 18:00 → 2018-08-10 10:00 (+19d) |  | none → 1.75d |
| 110 | تست و بهبود سامانه | 2018-07-22 18:00 → 2018-08-10 10:00 (+19d) | 2018-07-29 10:00 → 2018-08-16 10:00 (+18d) |  | none → 1.75d |
| 111 | نمرات اضافی | 2018-07-29 10:00 → 2018-08-16 10:00 (+18d) | 2018-08-03 15:00 → 2018-08-21 10:00 (+18d) |  | none → 1.75d |
| 112 | تحویل سامانه | 2018-08-03 15:00 → 2018-08-21 10:00 (+18d) | 2018-08-04 14:00 → 2018-08-22 10:00 (+18d) |  | none → 1.75d |
