# sample1

How a schedule from MS Project changed from version to version. A marks actual dates.

## Version 1 (saved 2018-04-23)

Note of the change: CHECK ==> msp_weekly folder added and updated for TA's to CheckProgress

| ID | WBS | Task | Duration | Start | Finish | Predecessors | Complete | Total float |
| --- | --- | --- | --- | --- | --- | --- | --- | --- |
| 1 | 1 | **پروژه ی تحلیل و طراحی** | 196d | 2018-03-05 08:00 A | 2018-08-23 17:00 |  | 13% | 0d |
| 2 | 1.1 | **فاز اول پروژه** | 2d | 2018-03-05 08:00 A | 2018-03-06 17:00 A |  | 100% |  |
| 3 | 1.1.1 | **تهیه پروپوزال** | 1d | 2018-03-05 08:00 A | 2018-03-05 17:00 |  | 100% |  |
| 4 |  | اهداف و توجیه | 1h | 2018-03-05 08:00 A | 2018-03-05 09:00 A |  | 100% |  |
| 5 |  | معرفی و مفاد قرارداد | 1h | 2018-03-05 08:00 A | 2018-03-05 09:00 A |  | 100% |  |
| 6 | 1.1.1.3 | **معرفی سیستم و توضیح تکنولوژی** | 3h | 2018-03-05 08:00 A | 2018-03-05 11:00 A |  | 100% |  |
| 7 |  | تهیه گزینه راه حل‌های تکنولوژی | 1h | 2018-03-05 08:00 A | 2018-03-05 09:00 A |  | 100% |  |
| 8 |  | امکان سنجی گزینه ها | 1h | 2018-03-05 09:00 A | 2018-03-05 10:00 A | 7 | 100% |  |
| 9 |  | انتخاب گزینه راه حل نهایی | 1h | 2018-03-05 10:00 A | 2018-03-05 11:00 A | 8 | 100% |  |
| 10 | 1.1.1.4 | **پوشش نیازمندی‌های کارکردی و غیرکارکردی** | 1h | 2018-03-05 08:00 A | 2018-03-05 09:00 A |  | 100% |  |
| 11 |  | نیازمندی‌های کارکردی | 1h | 2018-03-05 08:00 A | 2018-03-05 09:00 A |  | 100% |  |
| 12 |  | نیازمندی‌های غیرکارکردی | 1h | 2018-03-05 08:00 A | 2018-03-05 09:00 A |  | 100% |  |
| 13 |  | برآورد زمانی | 1h | 2018-03-05 09:00 A | 2018-03-05 10:00 A |  | 100% |  |
| 14 |  | برآوردمالی | 1h | 2018-03-05 10:00 A | 2018-03-05 11:00 A | 13 | 100% |  |
| 15 |  | مراحل اجرای پروژه | 1h | 2018-03-05 08:00 A | 2018-03-05 09:00 A |  | 100% |  |
| 16 |  | معرفی اعضای گروه | 1h | 2018-03-05 08:00 A | 2018-03-05 09:00 A |  | 100% |  |
| 17 |  | بیان نمرات اضافی | 1h | 2018-03-05 09:00 A | 2018-03-05 10:00 A |  | 100% |  |
| 18 |  | بازخوانی و تصحیح پروپوزال و آماده سازی نسخه نهایی | 1d | 2018-03-06 08:00 A | 2018-03-06 17:00 A | 3 | 100% |  |
| 19 |  | ارسال نسخه نهایی | 0d | 2018-03-06 17:00 A | 2018-03-06 17:00 A | 18 | 100% |  |
| 20 | 1.2 | **فاز دوم پروژه** | 9.5d | 2018-03-07 08:00 A | 2018-03-15 12:00 A | 2 | 100% |  |
| 21 | 1.2.1 | **آماده سازی درخت شکست کار** | 0.12d | 2018-03-07 08:00 A | 2018-03-07 09:00 A |  | 100% |  |
| 22 |  | مرور پروپوزال و موارد تعیین شده | 1h | 2018-03-07 08:00 A | 2018-03-07 09:00 A |  | 100% |  |
| 23 |  | تخمین زمانی هر فاز | 1h | 2018-03-07 08:00 A | 2018-03-07 09:00 A |  | 100% |  |
| 24 |  | تخمین منابع مورد نیاز | 1h | 2018-03-07 08:00 A | 2018-03-07 09:00 A |  | 100% |  |
| 25 |  | تقسیم بندی وظایف متناسب با تخمین های زده شده | 1h | 2018-03-07 08:00 A | 2018-03-07 09:00 A |  | 100% |  |
| 26 |  | وارد کردن ساختار درخت شکست کار در نرم افزار | 2d | 2018-03-07 09:00 A | 2018-03-09 09:00 A | 21 | 100% |  |
| 27 |  | کنترل نهایی مدیر پروژه و ارسال | 3h | 2018-03-15 09:00 A | 2018-03-15 12:00 A | 26FS+4d | 100% |  |
| 28 | 1.3 | **فاز سوم پروژه** | 32d | 2018-04-03 08:00 A | 2018-04-30 17:00 | 20 | 64% |  |
| 29 | 1.3.1 | **use case تدوین** | 30.38d | 2018-04-03 08:00 A | 2018-04-29 15:00 |  | 64% | 25.75d |
| 30 | 1.3.1.1 | **use case تدوین** | 12.12d | 2018-04-03 08:00 A | 2018-04-14 09:00 |  | 97% | 36.62d |
| 31 |  | شناسایی ابزار مناسب نرم افزاری | 2h | 2018-04-03 08:00 A | 2018-04-03 10:00 A |  | 100% |  |
| 32 | 1.3.1.1.2 | **use case نوشتن** | 6.25d | 2018-04-03 08:00 A | 2018-04-08 14:00 A |  | 100% |  |
| 33 |  | actors مشخص کردن | 34h | 2018-04-03 08:00 A | 2018-04-07 10:00 A |  | 100% |  |
| 34 |  | مشخص کردن نیاز مندی های کسب و کاری | 15h | 2018-04-03 08:00 A | 2018-04-04 16:00 A |  | 100% |  |
| 35 |  | نوشتن دیاگرام کلی بر روی کاغذ | 2d | 2018-04-07 10:00 A | 2018-04-08 14:00 A | 33, 34 | 100% |  |
| 36 |  | تایید نهایی دیاگرام توسط مدیر پروژه و اعضا | 3h | 2018-04-08 14:00 A | 2018-04-08 17:00 A | 35 | 100% |  |
| 37 |  | وارد کردن در ابزار مناسب | 8h | 2018-04-08 17:00 A | 2018-04-09 14:00 A | 36 | 100% |  |
| 38 | 1.3.1.1.5 | **مستند سازی** | 4.12d | 2018-04-09 14:00 A | 2018-04-13 15:00 A |  | 100% |  |
| 39 |  | use case مستند سازی | 3d | 2018-04-09 14:00 A | 2018-04-12 14:00 A | 37 | 100% |  |
| 40 |  | اولویت بندی | 4h | 2018-04-12 14:00 A | 2018-04-13 09:00 A | 39 | 100% |  |
| 41 |  | پیدا کردن رابطه های پیشنیازی و پسنیازی | 5h | 2018-04-13 09:00 A | 2018-04-13 15:00 A | 40 | 100% |  |
| 42 |  | تایید و بازخوانی توسط اعضا و مدیر و ادغام | 3h | 2018-04-13 15:00 | 2018-04-14 09:00 | 41 |  | 36.62d |
| 43 | 1.3.1.2 | **تدوین سناریو های تست** | 7.38d | 2018-04-23 08:00 | 2018-04-29 15:00 |  |  |  |
| 44 |  | نوشتن سناریو ها | 3d | 2018-04-23 08:00 | 2018-04-25 17:00 | 42 |  | 25.75d |
| 45 |  | مشخص کردن تست ها | 2d | 2018-04-26 08:00 | 2018-04-27 17:00 | 44 |  | 25.75d |
| 46 |  | مشخص کردن داده ی تست ها | 2d | 2018-04-28 08:00 | 2018-04-29 12:00 | 45 |  | 25.75d |
| 47 |  | تایید توسط اعضا و مدیر | 3h | 2018-04-29 12:00 | 2018-04-29 15:00 | 46 |  | 25.75d |
| 48 |  | وتست هاuse case فرستادن | 1h | 2018-04-29 15:00 | 2018-04-29 16:00 | 47 |  | 25.75d |
| 49 | 1.4 | **فاز چهارم پروژه** | 48d | 2018-05-03 08:00 | 2018-06-13 17:00 | 48 |  |  |
| 50 | 1.4.1 | **use case تدوین** | 27.38d | 2018-05-03 08:00 | 2018-05-26 19:00 |  |  | 22.25d |
| 51 | 1.4.1.1 | **use case تدوین** | 16.62d | 2018-05-03 08:00 | 2018-05-17 14:00 |  |  | 22.25d |
| 52 | 1.4.1.1.1 | **use case نوشتن** | 8.75d | 2018-05-03 08:00 | 2018-05-10 15:00 |  |  | 22.25d |
| 53 |  | actors مشخص کردن | 2d | 2018-05-03 08:00 | 2018-05-04 17:00 | 48 |  | 22.25d |
| 54 |  | مشخص کردن نیاز مندی های کسب و کاری | 30h | 2018-05-05 08:00 | 2018-05-07 15:00 | 53 |  | 22.25d |
| 55 |  | نوشتن دیاگرام کلی بر روی کاغذ | 3d | 2018-05-07 15:00 | 2018-05-10 15:00 | 54 |  | 22.25d |
| 56 |  | تایید نهایی دیاگرام توسط مدیر پروژه و اعضا | 3h | 2018-05-10 15:00 | 2018-05-11 09:00 | 55 |  | 22.25d |
| 57 |  | وارد کردن در ابزار مناسب | 8h | 2018-05-11 09:00 | 2018-05-12 09:00 | 56 |  | 22.25d |
| 58 | 1.4.1.1.4 | **مستند سازی** | 5.88d | 2018-05-12 09:00 | 2018-05-16 17:00 |  |  | 22.25d |
| 59 |  | use case مستند سازی | 4d | 2018-05-12 09:00 | 2018-05-15 09:00 | 57 |  | 22.25d |
| 60 |  | اولویت بندی | 6h | 2018-05-15 09:00 | 2018-05-15 16:00 | 59 |  | 22.25d |
| 61 |  | پیدا کردن رابطه های پیشنیازی و پسنیازی | 9h | 2018-05-15 16:00 | 2018-05-16 17:00 | 60 |  | 22.25d |
| 62 |  | تایید و بازخوانی توسط اعضا و مدیر | 5h | 2018-05-17 08:00 | 2018-05-17 14:00 | 61 |  | 22.25d |
| 63 | 1.4.1.2 | **تدوین سناریو های تست** | 10d | 2018-05-17 14:00 | 2018-05-26 13:00 |  |  | 22.25d |
| 64 |  | نوشتن سناریو ها | 4d | 2018-05-17 14:00 | 2018-05-20 17:00 | 62 |  | 22.25d |
| 65 |  | مشخص کردن تست ها | 3d | 2018-05-20 17:00 | 2018-05-23 14:00 | 64 |  | 22.25d |
| 66 |  | مشخص کردن داده ی تست ها | 3d | 2018-05-23 14:00 | 2018-05-26 13:00 | 65 |  | 22.25d |
| 67 |  | تایید توسط اعضا و مدیر | 6h | 2018-05-26 13:00 | 2018-05-26 19:00 | 66 |  | 22.25d |
| 68 |  | وتست هاuse case فرستادن | 1h | 2018-05-26 19:00 | 2018-05-26 20:00 | 67 |  | 22.25d |
| 69 | 1.5 | **فاز پنجم پروژه** | 648h | 2018-06-14 08:00 | 2018-08-23 17:00 |  |  |  |
| 70 | 1.5.1 | **ERD تحلیل و تدوین** | 7.5d | 2018-06-14 08:00 | 2018-06-20 12:00 |  |  | 1.75d |

| ID | WBS | Task | Duration | Start | Finish | Predecessors | Total float | Constraint |
| --- | --- | --- | --- | --- | --- | --- | --- | --- |
| 71 |  | مطالعه و تحلیل محیط | 2h | 2018-06-14 08:00 | 2018-06-14 10:00 | 68 | 1.75d |  |
| 72 |  | مشخص کردن نیاز مندی ها | 3h | 2018-06-14 10:00 | 2018-06-14 14:00 | 71 | 1.75d |  |
| 73 |  | تشخیص محدودیت ها | 3h | 2018-06-14 14:00 | 2018-06-14 17:00 | 72 | 1.75d |  |
| 74 | 1.5.1.4 | **مطالعه موجودیت ها** | 1.12d | 2018-06-15 08:00 | 2018-06-16 09:00 |  | 1.75d |  |
| 75 |  | تعیین موجودیت ها | 2h | 2018-06-15 08:00 | 2018-06-15 10:00 | 73 | 1.75d |  |
| 76 |  | تعیین وضع موجودیت ها | 2h | 2018-06-15 10:00 | 2018-06-15 12:00 | 75 | 79.5d |  |
| 77 |  | تعیین صفت ها ی هر موجودیت | 4h | 2018-06-15 10:00 | 2018-06-15 15:00 | 75 | 1.75d |  |
| 78 | 1.5.1.4.4 | **نوع ارتباط های موجودیت ها** | 0.38d | 2018-06-15 15:00 | 2018-06-16 09:00 | 77 | 1.75d |  |
| 79 |  | چندی ارتباط | 3h | 2018-06-15 15:00 | 2018-06-16 09:00 |  | 78.88d |  |
| 80 |  | الزامی بودن یا نبودن ارتباط | 1h | 2018-06-15 15:00 | 2018-06-15 16:00 |  | 1.75d |  |
| 81 | 1.5.1.5 | **نمودار** | 4.62d | 2018-06-15 16:00 | 2018-06-19 12:00 |  | 73.5d |  |
| 82 |  | رسم نمودار بر کاغذ | 2d | 2018-06-15 16:00 | 2018-06-17 11:00 | 80 | 74.62d |  |
| 83 |  | وارسی نمودار و بهینه سازی | 1d | 2018-06-18 08:00 | 2018-06-18 17:00 | 82 | 73.5d | start no earlier than 2018-06-18 08:00 |
| 84 |  | تایید توسط اعضا و مدیر | 2h | 2018-06-19 08:00 | 2018-06-19 10:00 | 83 | 73.5d |  |
| 85 |  | رسم با ابزار مناسب | 2h | 2018-06-19 10:00 | 2018-06-19 12:00 | 84 | 73.5d |  |
| 86 |  | نوشتن یادداشت های تکمیلی در صورت نیاز | 1d | 2018-06-19 13:00 | 2018-06-20 12:00 | 85 | 73.5d |  |
| 87 |  | تایید توسط اعضا و مدیر | 1h | 2018-06-14 08:00 | 2018-06-14 09:00 |  | 80.75d |  |
| 88 |  | ارسال | 1h | 2018-06-14 09:00 | 2018-06-14 10:00 | 87 | 80.75d |  |
| 89 | 1.5.2 | **پیاده سازی سامانه** | 77.38d | 2018-06-15 16:00 | 2018-08-22 10:00 |  | 1.75d |  |
| 90 | 1.5.2.1 | **طراحی منطقی سامانه** | 16.38d | 2018-06-15 16:00 | 2018-06-30 10:00 |  | 1.75d |  |
| 91 | 1.5.2.1.1 | **طراحی منطقی ظاهر کلی سامانه** | 4d | 2018-06-15 16:00 | 2018-06-18 16:00 |  | 1.75d |  |
| 92 |  | طراحی منطقی صفحات سامانه | 2d | 2018-06-15 16:00 | 2018-06-17 11:00 | 80 | 1.75d |  |
| 93 | 1.5.2.1.1.2 | **ارتباط صفحات سامانه با هم دیگر** | 2d | 2018-06-17 11:00 | 2018-06-18 16:00 |  | 1.75d |  |
| 94 |  | ارتباط درون سامانه ای | 2d | 2018-06-17 11:00 | 2018-06-18 16:00 | 92 | 1.75d |  |
| 95 |  | ارتباط های برون سامانه ای به درون سامانه ای | 2d | 2018-06-17 11:00 | 2018-06-18 16:00 | 94SS | 1.75d |  |
| 96 | 1.5.2.1.2 | **طراحی منطقی مکانیزم های ارتباط** | 10d | 2018-06-18 16:00 | 2018-06-27 16:00 |  | 1.75d |  |
| 97 |  | مکانیزم های انتقال داده | 3d | 2018-06-18 16:00 | 2018-06-21 16:00 | 95 | 1.75d |  |
| 98 |  | مکانیزم های ارسال داده ای خودکار | 4d | 2018-06-21 16:00 | 2018-06-24 19:00 | 97 | 1.75d |  |
| 99 |  | مکانیزم های کنترلی | 3d | 2018-06-24 19:00 | 2018-06-27 16:00 | 98 | 1.75d |  |
| 100 |  | یادداشت های تکمیلی | 1d | 2018-06-27 16:00 | 2018-06-28 16:00 | 99 | 1.75d |  |
| 101 |  | تایید توسط مدیر پروژه | 3h | 2018-06-28 16:00 | 2018-06-29 10:00 | 100 | 1.75d |  |
| 102 |  | مستند سازی طراحی منطقی | 1d | 2018-06-29 10:00 | 2018-06-30 10:00 | 101 | 1.75d |  |
| 103 | 1.5.2.2 | **پیاده سازی** | 61d | 2018-06-30 10:00 | 2018-08-22 10:00 |  | 1.75d |  |
| 104 |  | پیاده سازی صفحات مختلف | 15d | 2018-06-30 10:00 | 2018-07-13 10:00 | 102 | 1.75d |  |
| 105 | 1.5.2.2.2 | **پیاده سازی ارتباط ها** | 25d | 2018-07-13 10:00 | 2018-08-04 10:00 |  | 1.75d |  |
| 106 |  | پیاده سازی ارتباط صفحات | 8d | 2018-07-13 10:00 | 2018-07-20 10:00 | 104 | 1.75d |  |
| 107 |  | پیاده سازی ارتباط برون سامانه ای | 6d | 2018-07-13 10:00 | 2018-07-18 10:00 | 104 | 3.75d |  |
| 108 |  | پیاده سازی ارتباط های داده ای و پشت سامانه ای | 17d | 2018-07-20 10:00 | 2018-08-04 10:00 | 107, 106 | 1.75d |  |
| 109 |  | پیاده سازی مکانیزم های کنترلی | 7d | 2018-08-04 10:00 | 2018-08-10 10:00 | 108 | 1.75d |  |
| 110 |  | تست و بهبود سامانه | 7d | 2018-08-10 10:00 | 2018-08-16 10:00 | 109 | 1.75d |  |
| 111 |  | نمرات اضافی | 6d | 2018-08-16 10:00 | 2018-08-21 10:00 | 110 | 1.75d |  |
| 112 |  | تحویل سامانه | 1d | 2018-08-21 10:00 | 2018-08-22 10:00 | 111 | 1.75d |  |

## Version 2 (saved 2018-05-02)

Note of the change: Merge branch 'master' of https://github.com/rzarhmi/SADProject

Last finish stays 2018-08-23. Complete tasks 29 → 35.

Changed:

| ID | Task | Start | Finish | Complete | Total float |
| --- | --- | --- | --- | --- | --- |
| 1 | **پروژه ی تحلیل و طراحی** |  |  | 13% → 18% |  |
| 28 | **فاز سوم پروژه** |  |  | 64% → 100% |  |
| 29 | **use case تدوین** |  | 2018-04-29 15:00 A | 64% → 100% | 25.75d → none |
| 30 | **use case تدوین** |  | 2018-04-14 09:00 A | 97% → 100% | 36.62d → none |
| 42 | تایید و بازخوانی توسط اعضا و مدیر و ادغام | 2018-04-13 15:00 A | 2018-04-14 09:00 A | 0% → 100% | 36.62d → none |
| 43 | **تدوین سناریو های تست** | 2018-04-23 08:00 A | 2018-04-29 15:00 A | 0% → 100% |  |
| 44 | نوشتن سناریو ها | 2018-04-23 08:00 A | 2018-04-25 17:00 A | 0% → 100% | 25.75d → none |
| 45 | مشخص کردن تست ها | 2018-04-26 08:00 A | 2018-04-27 17:00 A | 0% → 100% | 25.75d → none |
| 46 | مشخص کردن داده ی تست ها | 2018-04-28 08:00 A | 2018-04-29 12:00 A | 0% → 100% | 25.75d → none |
| 47 | تایید توسط اعضا و مدیر | 2018-04-29 12:00 A | 2018-04-29 15:00 A | 0% → 100% | 25.75d → none |
| 48 | وتست هاuse case فرستادن | 2018-04-29 15:00 A | 2018-04-29 16:00 A | 0% → 100% | 25.75d → none |

## Version 3 (saved 2018-05-07)

Note of the change: UI design Added

Last finish stays 2018-08-23.

Changed:

| ID | Task | Start | Finish | Total float |
| --- | --- | --- | --- | --- |
| 50 | **use case تدوین** | 2018-05-03 08:00 → 2018-05-10 08:00 (+7d) | 2018-05-26 19:00 → 2018-06-02 19:00 (+7d) | 22.25d → none |
